How a schedule from MS Project changed from version to version. A marks actual dates.

## Version 1 (data date 2007-01-04, saved 2007-01-05, file “校园一卡通系统”-项目进度计划(产品化)-基准.mpp)

Note of the change: add other documents

| ID | WBS | Task | Duration | Start | Finish | Predecessors | Complete | Total float | Constraint |
| --- | --- | --- | --- | --- | --- | --- | --- | --- | --- |
| 1 | 1 | **一卡通产品开发计划** | 104.53d? | 2006-12-18 A | 2007-05-21 |  |  | 0d |  |
| 2 | 1.1 | **项目管理活动** | 101.49d? | 2006-12-18 A | 2007-05-16 |  | 1% | 2.92d |  |
| 3 |  | 工作计划维护 | 19.38d? | 2007-01-04 A | 2007-03-14 |  | 5% | 48.46d |  |
| 4 |  | 周客户项目例会 | 7.5d | 2007-04-24 | 2007-05-03 |  |  | 11.67d |  |
| 5 |  | 周项目组内部例会 | 1.25d | 2007-05-15 | 2007-05-16 |  |  | 2.92d |  |
| 6 |  | 月度述职报告会 | 3.5d | 2006-12-18 | 2006-12-21 |  |  | 100.9d |  |
| 7 |  | 工作周报 | 7.5d | 2007-05-03 | 2007-05-15 |  |  | 4.17d |  |
| 8 |  | 工作协调 | 25d? | 2007-03-16 | 2007-04-24 |  |  | 19.17d |  |
| 9 |  | 配置管理 | 9.38d? | 2007-03-23 | 2007-04-05 |  |  | 31.93d |  |
| 10 | 1.2 | **项目开发活动** | 104.53d? | 2006-12-18 | 2007-05-21 |  |  | 0d |  |
| 11 | 1.2.1 | **产品配套的完善** | 63.1d? | 2006-12-18 | 2007-03-23 |  |  | 41.31d |  |
| 12 | 1.2.1.1 | **完善产品开发流程** | 13d? | 2007-03-06 | 2007-03-23 |  |  | 41.31d |  |
| 13 |  | 版本定义和发布流程 | 2d? | 2007-03-13 | 2007-03-15 |  |  | 47.31d |  |
| 14 |  | 产品的需求跟踪方法和流程-客户化、产品需求 | 2d? | 2007-03-15 | 2007-03-19 |  |  | 45.31d |  |
| 15 |  | 定义changelog规范和流程 | 2d? | 2007-03-19 | 2007-03-21 |  |  | 43.31d |  |
| 16 |  | 制定系统上线检查表-checklist | 5d? | 2007-03-06 | 2007-03-13 |  |  | 49.31d |  |
| 17 |  | 制定设备签收维修变更的流程 | 2d? | 2007-03-21 | 2007-03-23 |  |  | 41.31d |  |
| 18 | 1.2.1.2 | **完善产品配套文档** | 50.1d? | 2006-12-18 | 2007-03-06 |  |  | 54.31d |  |
| 19 |  | 完善产品使用手册 | 10d? | 2006-12-18 | 2006-12-30 |  |  | 94.4d |  |
| 20 |  | 完善产品安装维护手册 | 10d? | 2007-01-10 | 2007-01-24 |  |  | 77.97d |  |
| 21 |  | 完善各种产品开发文档 | 10d? | 2007-01-30 | 2007-02-13 |  |  | 64.31d |  |
| 22 |  | 完善各种产品实施文档 | 10d? | 2007-02-13 | 2007-03-06 |  |  | 54.31d |  |
| 23 | 1.2.2 | **新系统对接** | 91.93d? | 2006-12-31 | 2007-05-18 |  |  | 1d |  |
| 24 | 1.2.2.1 | **13、水控管理系统对接** | 91.93d? | 2006-12-31 | 2007-05-18 |  |  | 1d |  |
| 25 | 1.2.2.1.1 | **三九水控的对接** | 91.93d? | 2006-12-31 | 2007-05-18 |  |  | 1d |  |
| 26 | 1.2.2.1.1.1 | **脱机模式的对接** | 47.26d? | 2006-12-31 | 2007-03-16 |  |  | 1d |  |
| 27 |  | 写卡动态库的修改 | 2d? | 2006-12-31 | 2007-01-05 | 83 |  | 43.26d |  |
| 28 |  | 钱包的转帐 | 1d? | 2007-01-05 | 2007-01-08 | 27 |  | 43.26d |  |
| 29 |  | 流水的采集 | 2d? | 2007-03-14 | 2007-03-16 |  |  | 1d |  |
| 30 |  | 帐务的处理 | 2d? | 2007-01-08 | 2007-01-10 | 28 |  | 43.26d |  |
| 31 | 1.2.2.1.1.2 | **联机模式的对接** | 44.67d? | 2007-03-16 | 2007-05-18 | 26 |  | 1d |  |
| 32 |  | 对于自增长编号的规范0开始or1开始 | 1d? | 2007-03-16 | 2007-03-19 |  |  | 1d |  |
| 33 |  | 硬件支持 | 1d? | 2007-03-19 | 2007-04-10 | 32 |  | 1d |  |
| 34 |  | 充值扣款选择钱包 | 1d? | 2007-05-15 | 2007-05-16 | 33 |  | 1d |  |
| 35 |  | 发卡选择打开几个钱包 | 1d? | 2007-05-16 | 2007-05-17 | 34 |  | 1d |  |
| 36 |  | 改造卡号和钱包号查找帐户的功能 | 1d? | 2007-05-17 | 2007-05-18 | 35 |  | 1d |  |
| 37 |  | 凯路水控的对接 | 5d? | 2007-05-04 | 2007-05-15 |  |  | 4.33d |  |
| 38 | 1.2.2.2 | **11、门禁管理系统对接** | 57.26d? | 2007-01-12 | 2007-04-10 |  |  | 24.17d |  |
| 39 |  | 汉军门禁的对接 | 5d? | 2007-01-12 | 2007-01-19 | 142, 62 |  | 24.17d |  |
| 40 |  | 酬勤门禁的对接 | 10d? | 2007-03-16 | 2007-04-10 | 41FS+1d |  | 29.17d |  |
| 41 |  | 12、通道管理系统对接 | 10d? | 2007-02-27 | 2007-03-15 | 39 |  | 29.17d |  |
| 42 |  | 51、机房收费系统对接 | 3d? | 2007-02-07 | 2007-02-12 | 126 |  | 54.71d |  |
| 43 |  | 52、自助复印系统对接 | 5d? | 2007-03-22 | 2007-03-29 |  |  | 37.21d |  |
| 44 |  | 53、自助洗衣系统对接 | 5d? | 2007-03-29 | 2007-04-05 |  |  | 31.3d |  |
| 45 |  | 54、自助照相系统对接 | 5d? | 2007-04-05 | 2007-04-12 |  |  | 27.21d |  |
| 46 |  | 55、电子寄存柜系统对接 | 5d? | 2007-04-12 | 2007-04-20 |  |  | 20.88d |  |
| 47 |  | 指纹考勤的支持 | 10d? | 2007-03-08 | 2007-03-22 |  |  | 42.21d | start no earlier than 2006-12-25 |
| 48 | 1.2.3 | **现有系统的完善** | 104.53d? | 2006-12-18 | 2007-05-21 |  |  | 0d |  |
| 49 | 1.2.3.1 | **美工设计** | 9d? | 2007-01-04 | 2007-01-16 |  |  | 83.53d |  |
| 50 |  | 新版的卡面设计 | 3d? | 2007-01-04 | 2007-01-08 |  |  | 83.53d | start no earlier than 2007-01-01 |
| 51 |  | c/s架构程序的美工设计 | 3d? | 2007-01-09 | 2007-01-11 | 50 |  | 83.53d |  |
| 52 |  | c/s架构的安装封面 | 3d? | 2007-01-12 | 2007-01-16 | 51 |  | 83.53d |  |
| 53 | 1.2.3.2 | **01、拍照打卡系统完善** | 20d? | 2007-01-15 | 2007-02-12 |  |  | 16.76d |  |
| 54 |  | 拍照系统改版 | 10d? | 2007-01-15 | 2007-01-29 | 63 |  | 16.76d | start no earlier than 2007-01-01 |
| 55 |  | 卡片打印系统改版 | 10d? | 2007-01-29 | 2007-02-12 | 54 |  | 16.76d |  |
| 56 | 1.2.3.3 | **04、会议签到管理系统** | 34.02d? | 2007-01-05 | 2007-03-01 |  |  | 35.93d |  |
| 57 |  | 实现脱机会议签到 | 15d? | 2007-01-05 | 2007-01-26 | 66 |  | 35.93d | start no earlier than 2007-01-01 |
| 58 |  | 整合海事大学的需求 | 0d? | 2007-03-01 | 2007-03-01 |  |  | 57.4d | start no earlier than 2007-03-01 |
| 59 | 1.2.3.4 | **11、门禁管理系统完善** | 63.86d? | 2006-12-18 | 2007-03-23 |  |  | 20.86d |  |
| 60 |  | 总体设计 | 3.33d? | 2006-12-18 | 2006-12-21 |  |  | 20.86d | start no earlier than 2006-12-18 |
| 61 |  | 通道机的对接设计 | 1.67d? | 2006-12-21 | 2006-12-22 | 60 |  | 20.86d |  |
| 62 |  | 开关门状态的监控 | 1.5d? | 2006-12-26 | 2006-12-28 | 61, 77 |  | 24.17d |  |
| 63 |  | 前台界面功能整改 | 10d? | 2006-12-29 | 2007-01-15 | 61, 76 |  | 16.76d |  |
| 64 |  | 重复卡检查报警-监控 | 3d? | 2006-12-28 | 2006-12-31 | 62 |  | 35.93d |  |
| 65 |  | 门未关报警-监控 | 1d? | 2006-12-31 | 2007-01-04 | 64 |  | 35.93d |  |
| 66 |  | 外力破坏报警-监控 | 1d? | 2007-01-04 | 2007-01-05 | 65 |  | 35.93d |  |
| 67 |  | 时间段排程设计 | 0.67d? | 2006-12-21 | 2006-12-21 | 60 |  | 39d |  |
| 68 |  | 刷卡、密码双重认证 | 1d? | 2007-03-16 | 2007-03-20 | 67 |  | 40.67d |  |
| 69 |  | 指纹、虹膜多重认证 | 0.5d? | 2007-03-20 | 2007-03-21 | 68 |  | 40.67d |  |
| 70 |  | 反潜回功能的设计 | 0.5d? | 2007-03-21 | 2007-03-21 | 69 |  | 40.67d |  |

| ID | WBS | Task | Duration | Start | Finish | Predecessors | Total float | Constraint |
| --- | --- | --- | --- | --- | --- | --- | --- | --- |
| 71 |  | 路线功能的设计 | 0.5d? | 2007-03-21 | 2007-03-22 | 70 | 40.67d |  |
| 72 |  | 区域功能的设计 | 0.5d? | 2007-03-22 | 2007-03-22 | 71 | 40.67d |  |
| 73 |  | 主副卡的设计 | 0.5d? | 2007-03-22 | 2007-03-23 | 72 | 40.67d |  |
| 74 |  | 胁迫码的设计 | 0.5d? | 2007-03-23 | 2007-03-23 | 73 | 40.67d |  |
| 75 | 1.2.3.5 | **02、综合管理系统完善** | 104.4d? | 2006-12-18 | 2007-05-21 |  | 0d |  |
| 76 |  | 业务重新命名 | 2.5d? | 2006-12-26 | 2006-12-29 | 77 | 16.76d | start no earlier than 2006-12-25 |
| 77 |  | 业务分支合并 | 1.6d? | 2006-12-25 | 2006-12-26 |  | 16.76d | start no earlier than 2006-12-25 |
| 78 | 1.2.3.5.3 | **drtp、gcc、bcc+bu的升级** | 1.67d? | 2007-05-02 | 2007-05-04 |  | 11.33d |  |
| 79 |  | bcc+bu架构的升级 | 0.83d? | 2007-05-02 | 2007-05-03 |  | 12.17d |  |
| 80 |  | 多个bcc的改造 | 0.83d? | 2007-05-03 | 2007-05-04 |  | 11.33d |  |
| 81 |  | 照片库和客户表的整合完善 | 1d? | 2007-04-11 | 2007-04-12 | 108 | 0d |  |
| 82 |  | 增加结算科目的划拨业务 | 1d? | 2007-04-12 | 2007-04-13 | 81 | 0d |  |
| 83 |  | 写卡失败机制的完善-借用字段 | 5d? | 2006-12-26 | 2006-12-31 | 77 | 43.26d |  |
| 84 |  | 修改直接取帐户表部门、名字的问题 | 1.5d? | 2007-04-13 | 2007-04-17 | 82 | 0d |  |
| 85 | 1.2.3.5.8 | **设备参数的更改记录** | 1.33d? | 2007-04-17 | 2007-04-18 | 84 | 0d |  |
| 86 |  | 搭伙费比例 | 0.33d? | 2007-04-17 | 2007-04-17 |  | 0d |  |
| 87 |  | 单次、累积大额参数 | 0.33d? | 2007-04-17 | 2007-04-18 | 86 | 0d |  |
| 88 |  | 卡权限控制参数 | 0.33d? | 2007-04-18 | 2007-04-18 | 87 | 0d |  |
| 89 |  | 设备更换的考虑 | 0.33d? | 2007-04-18 | 2007-04-18 | 88 | 0d |  |
| 90 |  | 补办校园卡的收费选项、容易出错 | 0.83d? | 2007-04-18 | 2007-04-19 | 85 | 0d |  |
| 91 |  | 商户结构调整的生效问题 | 2d? | 2006-12-29 | 2006-12-31 | 76 | 81.43d | start no earlier than 2006-12-25 |
| 92 |  | 设备商户的分配的不同时间段判断有问题 | 2d? | 2007-01-19 | 2007-01-23 | 39 | 68.93d |  |
| 93 |  | 数据库的备份方案 | 2.5d? | 2007-01-23 | 2007-01-25 | 92 | 68.93d |  |
| 94 |  | 增加新生卡类别，区别正式卡 | 1d? | 2007-04-19 | 2007-04-20 | 90 | 0d |  |
| 95 |  | 新生换卡的3000状态的完善 | 2d? | 2007-01-25 | 2007-01-29 | 93 | 68.93d |  |
| 96 |  | 补助功能的查询和下发错误的处理 | 1d? | 2007-04-20 | 2007-04-23 | 94 | 0d |  |
| 97 |  | 授权卡的改造和业务调整 | 5d? | 2007-01-10 | 2007-01-17 | 30 | 54.83d |  |
| 98 |  | 卡片密钥体系的设计 | 0d? | 2007-01-17 | 2007-01-17 | 97 | 54.83d |  |
| 99 | 1.2.3.5.18 | **报表的完善** | 8d? | 2007-02-12 | 2007-03-01 | 53 | 16.76d |  |
| 100 |  | 增加餐次报表和设置功能 | 2.5d? | 2007-02-12 | 2007-02-14 |  | 16.76d |  |
| 101 |  | 完善资产负债表-修改科目 | 1.5d? | 2007-02-14 | 2007-02-25 | 100 | 16.76d |  |
| 102 |  | 报表格式的统一修改 | 2d? | 2007-02-25 | 2007-02-27 | 101 | 16.76d |  |
| 103 |  | 支持不同种类的打印机 | 2d? | 2007-02-27 | 2007-03-01 | 102 | 16.76d |  |
| 104 | 1.2.3.5.19 | **帐务模块的调整** | 3d? | 2007-04-23 | 2007-04-26 | 96 | 0d |  |
| 105 |  | 前台配置界面 | 3d? | 2007-04-23 | 2007-04-26 |  | 0d |  |
| 106 |  | 后台支持配置的增删改查 | 0.83d? | 2007-04-23 | 2007-04-24 |  | 1.17d |  |
| 107 |  | 后台搭伙费部分改造 | 1d? | 2007-04-24 | 2007-04-25 | 106 | 1.17d |  |
| 108 | 1.2.3.5.20 | **科目和交易类型的设置** | 29.76d? | 2007-03-01 | 2007-04-11 | 99 | 0d |  |
| 109 |  | 后台支持交易代码和科目的是否可用状态 | 1d? | 2007-04-10 | 2007-04-11 |  | 0d |  |
| 110 |  | 增加二级科目的设置 | 1.67d? | 2007-03-01 | 2007-03-02 |  | 28.1d |  |
| 111 |  | 多数业务的调整 | 3d? | 2007-03-15 | 2007-04-03 |  | 6.5d |  |
| 112 | 1.2.3.5.21 | **前台动态显示字段** | 8d? | 2007-04-26 | 2007-05-08 | 104 | 0d |  |
| 113 |  | 查询界面的改造 | 3d? | 2007-04-26 | 2007-05-01 |  | 0d |  |
| 114 |  | 增加维护界面 | 5d? | 2007-05-01 | 2007-05-08 | 113 | 0d |  |
| 115 |  | 检查接口，入库 | 1d? | 2007-04-26 | 2007-04-27 |  | 7d |  |
| 116 |  | 增加4个后台功能 | 1d? | 2007-04-26 | 2007-04-27 |  | 7d |  |
| 117 | 1.2.3.5.22 | **非业务交易的日志保存和查看** | 5d? | 2007-05-08 | 2007-05-15 | 112 | 0d |  |
| 118 |  | 检查接口，入库 | 5d? | 2007-05-08 | 2007-05-15 |  | 0d |  |
| 119 |  | 在bu入口保存buffer | 1d? | 2007-05-08 | 2007-05-09 |  | 3d |  |
| 120 |  | 前台显示内容 | 2d? | 2007-05-08 | 2007-05-10 |  | 3d |  |
| 121 |  | 后台解析内容 | 1d? | 2007-05-09 | 2007-05-10 | 119 | 3d |  |
| 122 |  | 增加操作员号和工作站号 | 0.5d? | 2007-05-15 | 2007-05-16 | 117 | 0d |  |
| 123 | 1.2.3.5.24 | **定时任务的管理** | 0d? | 2007-05-16 | 2007-05-16 | 122 | 0d |  |
| 124 |  | 前台增加修改查询界面 | 0d? | 2007-05-16 | 2007-05-16 |  | 0d |  |
| 125 |  | 后台增加读取和修改contab的功能 | 0d? | 2007-05-16 | 2007-05-16 |  | 3.5d |  |
| 126 |  | syslog的统一 | 10d? | 2007-01-24 | 2007-02-07 | 98 | 54.71d |  |
| 127 |  | 时钟同步方案 | 1d? | 2007-01-29 | 2007-01-30 | 95 | 68.93d |  |
| 128 |  | 自动化升级 | 5d? | 2006-12-18 | 2006-12-25 |  | 99.4d |  |
| 129 | 1.2.3.5.28 | **系统安装** | 2d? | 2007-01-30 | 2007-02-01 | 127 | 68.93d |  |
| 130 |  | b/s*.war部署 | 0d? | 2007-01-30 | 2007-01-30 |  | 73.93d |  |
| 131 |  | 后台的安装.o和.bnd | 2d? | 2007-01-30 | 2007-02-01 |  | 68.93d |  |
| 132 | 1.2.3.5.29 | **blk的完善** | 3d? | 2007-02-01 | 2007-02-06 | 131 | 68.93d |  |
| 133 |  | 提高可配置性 | 0d? | 2007-02-01 | 2007-02-01 |  | 68.93d |  |
| 134 |  | 解决cpu占用率的问题 | 3d? | 2007-02-01 | 2007-02-06 | 133 | 68.93d |  |
| 135 |  | 前台的所有的错误提示统一风格 | 5d? | 2006-12-31 | 2007-01-10 |  | 87.97d |  |
| 136 |  | 多帐户结算的修改 | 3d? | 2006-12-31 | 2007-01-08 | 91 | 81.43d |  |
| 137 |  | 卡库不平和个人账户不平的调整 | 3d? | 2007-01-08 | 2007-01-11 | 136 | 81.43d |  |
| 138 |  | 查询数据的筛选-控制操作权限 | 3.5d? | 2007-05-16 | 2007-05-21 | 124 | 0d |  |
| 139 |  | 卡片使用张数的统计 | 0d? | 2007-01-11 | 2007-01-11 | 137 | 81.43d |  |
| 140 |  | 完善独立核算和非独立核算的机制 | 0.79d? | 2007-03-16 | 2007-03-20 |  | 44.17d | start no earlier than 2007-02-01 |

| ID | WBS | Task | Duration | Start | Finish | Predecessors | Total float | Constraint |
| --- | --- | --- | --- | --- | --- | --- | --- | --- |
| 141 |  | 对接的v23设备中途拔卡的处理 | 0d? | 2007-02-06 | 2007-02-06 | 134 | 68.93d |  |
| 142 |  | 16、通用网关系统的完善 | 10d? | 2006-12-28 | 2007-01-12 | 62 | 24.17d |  |
| 143 | 1.2.3.7 | **06、银行圈存系统完善** | 32.72d? | 2007-01-11 | 2007-03-05 |  | 54.71d |  |
| 144 |  | 圈存机的业务监控-心跳 | 1d? | 2007-01-11 | 2007-01-12 | 139 | 81.43d |  |
| 145 |  | 银行通讯接口和自身业务的分离 | 5d? | 2007-01-12 | 2007-01-19 | 144 | 81.43d |  |
| 146 |  | 结构的调整 | 10d? | 2007-02-12 | 2007-03-05 | 42 | 54.71d |  |
| 147 | 1.2.3.8 | **05、监控管理系统完善** | 27.5d? | 2007-01-26 | 2007-03-13 | 57 | 35.93d |  |
| 148 | 1.2.3.8.1 | **现有业务的整改** | 9.5d? | 2007-01-26 | 2007-02-08 |  | 35.93d |  |
| 149 |  | 数据字典的改造 | 1d? | 2007-01-26 | 2007-01-29 |  | 35.93d |  |
| 150 |  | gis操作的易用性改造（提示/点击进入等） | 2d? | 2007-01-29 | 2007-01-31 | 149 | 35.93d |  |
| 151 |  | 系统菜单专业化/布局合理化 | 1d? | 2007-01-31 | 2007-02-01 | 150 | 35.93d |  |
| 152 |  | 图例位置合理化 | 1d? | 2007-02-01 | 2007-02-02 | 151 | 35.93d |  |
| 153 |  | 图例用的图片优化 | 0.5d? | 2007-02-02 | 2007-02-02 | 152 | 35.93d |  |
| 154 |  | 前台增加系统监控日志展现 | 2d? | 2007-02-02 | 2007-02-06 | 153 | 35.93d |  |
| 155 |  | 丢数采集业务的完善-存在缺陷 | 2d? | 2007-02-06 | 2007-02-08 | 154 | 35.93d |  |
| 156 | 1.2.3.8.2 | **系统输出功能增强** | 13d? | 2007-02-08 | 2007-03-06 | 148 | 35.93d |  |
| 157 | 1.2.3.8.2.1 | **增加分析报表** | 13d? | 2007-02-08 | 2007-03-06 |  | 35.93d |  |
| 158 |  | 设备状态变化报表 | 5d? | 2007-02-08 | 2007-02-15 |  | 35.93d |  |
| 159 |  | 流水异常统计 | 5d? | 2007-02-15 | 2007-03-01 | 158 | 35.93d |  |
| 160 |  | 其他可能的报表 | 3d? | 2007-03-01 | 2007-03-06 | 159 | 35.93d |  |
| 161 |  | 增加查询结果印功能 | 0d? | 2007-03-06 | 2007-03-06 | 157 | 35.93d |  |
| 162 | 1.2.3.8.3 | **新增业务** | 5d? | 2007-03-06 | 2007-03-13 | 161 | 35.93d |  |
| 163 |  | 增加对服务器的监控 | 0d? | 2007-03-06 | 2007-03-06 |  | 35.93d |  |
| 164 |  | 增加对数据库的监控 | 0d? | 2007-03-06 | 2007-03-06 | 163 | 35.93d |  |
| 165 |  | 增加对软件/服务端口的监控 | 0d? | 2007-03-06 | 2007-03-06 | 164 | 35.93d |  |
| 166 |  | 增加对通讯平台的监控 | 0d? | 2007-03-06 | 2007-03-06 | 165 | 35.93d |  |
| 167 |  | 对接系统的监控-图书馆 | 5d? | 2007-03-06 | 2007-03-13 | 166 | 35.93d |  |
| 168 | 1.2.3.9 | **10、多媒体查询系统改版** | 60d? | 2007-01-16 | 2007-04-17 |  | 24.31d |  |
| 169 |  | 展示部分 | 30d? | 2007-01-16 | 2007-03-06 |  | 54.31d |  |
| 170 |  | 维护部分 | 30d? | 2007-03-06 | 2007-04-17 |  | 24.31d |  |
| 171 | 1.2.3.10 | **08、领导查询系统完善** | 2d? | 2007-03-29 | 2007-04-02 |  | 35.17d |  |
| 172 |  | 经费本充值次数 | 1d? | 2007-03-29 | 2007-03-30 |  | 35.17d | start no earlier than 2006-12-25 |
| 173 |  | 增加个人、设备的明细记录查询 | 1d? | 2007-03-30 | 2007-04-02 | 172 | 35.17d |  |
| 174 | 1.2.3.11 | **09、综合查询系统完善** | 6d? | 2007-03-27 | 2007-04-04 | 162 | 22.8d |  |
| 175 |  | 展现现代教育中心上机流水 | 3d? | 2007-03-27 | 2007-03-30 |  | 25.8d |  |
| 176 |  | 展现光华楼门禁流水 | 3d? | 2007-03-30 | 2007-04-04 |  | 22.8d |  |
| 177 |  | 07、考勤管理系统完善 | 10d? | 2007-04-02 | 2007-05-15 |  | 4.5d | start no earlier than 2006-12-25 |
| 178 |  | webservice通用接口 | 10d? | 2007-04-04 | 2007-04-18 | 174 | 22.8d |  |
| 179 | 1.2.4 | **上线系统维护和变更** | 59.17d? | 2006-12-19 | 2007-03-20 |  | 43.8d |  |
| 180 |  | 复旦大学 | 17.14d? | 2006-12-19 | 2007-03-09 |  | 51.48d |  |
| 181 |  | 上海大学 | 10d? | 2007-01-10 | 2007-03-19 |  | 45.38d |  |
| 182 |  | 泰州大学 | 9.9d? | 2007-01-12 | 2007-03-20 |  | 43.8d |  |
| 183 |  | 理工大学 | 14.41d? | 2006-12-22 | 2007-03-15 |  | 47.38d |  |
| 184 | 1.2.5 | **系统培训** | 54.78d? | 2007-02-07 | 2007-05-02 |  | 13d |  |
| 185 |  | 一卡通结算相关培训 | 5d? | 2007-03-05 | 2007-03-16 |  | 45.96d | start no earlier than 2007-02-01 |
| 186 |  | 一卡通web应用培训 | 8d? | 2007-03-19 | 2007-03-29 |  | 37.17d | start no earlier than 2007-02-01 |
| 187 |  | 一卡通产品体系架构培训 | 5d? | 2007-04-18 | 2007-05-02 |  | 13d | start no earlier than 2007-02-01 |
| 188 |  | 一卡通卡务业务相关培训 | 10d? | 2007-02-07 | 2007-03-02 |  | 55.78d | start no earlier than 2007-02-01 |
| 189 |  | 其他 | 8.57d? | 2006-12-18 | 2007-03-06 |  | 54.33d |  |
| 190 | 1.3 | **项目测试活动** | 79.7d? | 2006-12-18 | 2007-04-16 |  | 24.71d |  |
| 191 | 1.3.1 | **新对接系统测试** | 55.57d? | 2007-01-22 | 2007-04-16 |  | 24.71d |  |
| 192 | 1.3.1.1 | **水控系统** | 36.62d? | 2007-01-23 | 2007-03-21 | 24SS | 42.65d |  |
| 193 |  | 业务熟悉 | 0.5d? | 2007-03-21 | 2007-03-21 |  | 42.65d |  |
| 194 |  | 测试工作 | 2d? | 2007-03-16 | 2007-03-20 |  | 44.4d |  |
| 195 |  | 验证缺陷修改 | 0.5d? | 2007-01-23 | 2007-01-23 |  | 77.53d |  |
| 196 |  | 回归测试 | 0.75d? | 2007-03-20 | 2007-03-21 |  | 43.15d |  |
| 197 | 1.3.1.2 | **门禁系统** | 32.75d? | 2007-01-22 | 2007-03-14 | 38SS | 47.53d |  |
| 198 |  | 业务熟悉 | 1d? | 2007-01-22 | 2007-01-23 |  | 78.03d |  |
| 199 |  | 测试工作 | 2.5d? | 2007-03-08 | 2007-03-13 |  | 49.03d |  |
| 200 |  | 验证缺陷修改 | 0.5d? | 2007-03-14 | 2007-03-14 |  | 47.53d |  |
| 201 |  | 回归测试 | 1d? | 2007-03-13 | 2007-03-14 |  | 48.03d |  |
| 202 |  | 机房软件的对接测试 | 1d? | 2007-02-07 | 2007-02-08 | 42SS | 66.71d |  |
| 203 |  | 通道机的对接测试 | 1d? | 2007-02-27 | 2007-02-28 | 41SS | 57.83d |  |
| 204 |  | 自助复印测试 | 0.5d? | 2007-03-26 | 2007-03-26 | 43SS | 39.71d |  |
| 205 |  | 自助洗衣测试 | 0.5d? | 2007-04-02 | 2007-04-06 | 44SS+3h | 31.21d |  |
| 206 |  | 自助照相测试 | 1d? | 2007-04-09 | 2007-04-10 | 45SS | 29.21d |  |
| 207 |  | 电子寄存柜测试 | 0.5d? | 2007-04-16 | 2007-04-16 | 46SS | 24.71d |  |
| 208 |  | 指纹考勤的支持测试 | 0.25d? | 2007-03-09 | 2007-03-09 | 47SS+1d, 198FS+1d, 195FS+1d | 50.96d |  |
| 209 | 1.3.2 | **现有系统的测试工作** | 73.72d? | 2006-12-18 | 2007-04-06 |  | 30.68d |  |
| 210 | 1.3.2.1 | **拍照打卡** | 11d? | 2007-01-23 | 2007-02-07 | 53SS | 67.78d |  |

| ID | WBS | Task | Duration | Start | Finish | Predecessors | Total float |
| --- | --- | --- | --- | --- | --- | --- | --- |
| 211 |  | 业务熟悉 | 0.25d? | 2007-01-23 | 2007-01-23 |  | 68d |
| 212 |  | 测试工作 | 0.5d? | 2007-01-25 | 2007-01-25 | 211 | 67.9d |
| 213 |  | 验证缺陷修改 | 0.25d? | 2007-01-25 | 2007-01-25 | 212 | 67.78d |
| 214 |  | 回归测试 | 0.25d? | 2007-01-26 | 2007-02-07 | 213 | 67.78d |
| 215 | 1.3.2.2 | **前后台业务** | 52.62d? | 2006-12-18 | 2007-03-08 | 75SS | 48.88d |
| 216 |  | 熟悉业务改动以及新增功能 | 4d? | 2006-12-18 | 2006-12-22 |  | 48.88d |
| 217 |  | 各个测试模块功能、业务罗列 | 3d? | 2006-12-22 | 2006-12-27 | 216 | 48.88d |
| 218 |  | 部分模块制定测试方法 | 2d? | 2006-12-27 | 2006-12-29 | 217 | 48.88d |
| 219 |  | 修改部分测试用例 | 3d? | 2006-12-29 | 2007-01-04 | 218 | 48.88d |
| 220 |  | 测试工作 | 10d? | 2007-01-04 | 2007-01-18 | 219 | 48.88d |
| 221 |  | 验证缺陷修改 | 2d? | 2007-01-18 | 2007-01-22 | 220 | 48.88d |
| 222 |  | 回归测试 | 4d? | 2007-03-02 | 2007-03-08 | 221 | 51.78d |
| 223 | 1.3.2.3 | **圈存完善测试** | 1.12d? | 2007-03-15 | 2007-03-16 | 143SS | 46.4d |
| 224 |  | 业务熟悉 | 0.25d? | 2007-03-15 | 2007-03-15 |  | 46.78d |
| 225 |  | 测试工作 | 0.5d? | 2007-03-15 | 2007-03-15 |  | 47.03d |
| 226 |  | 缺陷跟踪 | 0.12d? | 2007-03-16 | 2007-03-16 |  | 46.4d |
| 227 |  | 回归测试 | 0.25d? | 2007-03-15 | 2007-03-15 |  | 46.53d |
| 228 | 1.3.2.4 | **监控系统** | 8.5d? | 2007-01-26 | 2007-02-07 | 147SS | 67.93d |
| 229 |  | 新业务熟悉 | 0.5d? | 2007-01-26 | 2007-01-26 |  | 67.93d |
| 230 |  | 修改现有的部分测试用例 | 1.5d? | 2007-01-26 | 2007-01-30 | 229 | 67.93d |
| 231 |  | 测试工作 | 4d? | 2007-01-30 | 2007-02-05 | 230 | 67.93d |
| 232 |  | 缺陷跟踪 | 0.5d? | 2007-02-05 | 2007-02-05 | 231 | 67.93d |
| 233 |  | 回归测试 | 2d? | 2007-02-05 | 2007-02-07 | 232 | 67.93d |
| 234 | 1.3.2.5 | **多媒体查询系统** | 36.62d? | 2007-01-22 | 2007-03-20 | 168SS | 39.75d |
| 235 |  | 业务熟悉 | 0.25d? | 2007-01-22 | 2007-01-22 |  | 39.75d |
| 236 |  | 测试工作 | 1d? | 2007-01-24 | 2007-01-24 | 235 | 39d |
| 237 |  | 缺陷跟踪 | 0.25d? | 2007-01-25 | 2007-01-25 | 236 | 38.9d |
| 238 |  | 回归测试 | 0.5d? | 2007-03-20 | 2007-03-20 | 237 | 43.9d |
| 239 | 1.3.2.6 | **领导查询** | 1.25d? | 2007-03-29 | 2007-03-30 | 171SS | 35.92d |
| 240 |  | 熟悉新业务 | 0.12d? | 2007-03-29 | 2007-03-29 |  | 35.92d |
| 241 |  | 修改部分测试用例 | 0.25d? | 2007-03-29 | 2007-03-29 | 240 | 35.92d |
| 242 |  | 测试工作 | 0.5d? | 2007-03-29 | 2007-03-30 | 241 | 35.92d |
| 243 |  | 缺陷跟踪 | 0.12d? | 2007-03-30 | 2007-03-30 | 242 | 35.92d |
| 244 |  | 回归测试 | 0.25d? | 2007-03-30 | 2007-03-30 | 243 | 35.92d |
| 245 | 1.3.2.7 | **综合查询** | 2.12d? | 2007-04-04 | 2007-04-06 | 174 | 30.68d |
| 246 |  | 熟悉新业务 | 0.25d? | 2007-04-04 | 2007-04-04 |  | 30.68d |
| 247 |  | 修改部分测试用例 | 0.5d? | 2007-04-04 | 2007-04-05 | 246 | 30.68d |
| 248 |  | 测试工作 | 0.75d? | 2007-04-05 | 2007-04-06 | 247 | 30.68d |
| 249 |  | 缺陷跟踪 | 0.25d? | 2007-04-06 | 2007-04-06 | 248 | 30.68d |
| 250 |  | 回归测试 | 0.38d? | 2007-04-06 | 2007-04-06 | 249 | 30.68d |
| 251 |  | 考勤的功能测试 | 2d? | 2007-04-02 | 2007-04-04 | 177SS | 33.17d |

## Version 2 (data date 2007-06-24, saved 2007-07-11, file “校园一卡通系统”-项目进度计划(产品化)111.mpp)

Note of the change: add other documents

Last finish 2007-05-21 → 2007-07-10 (+50d). Complete tasks 0 → 188.

Added:

| ID | Task | Duration | Start | Finish | Predecessors | Constraint | Resources |
| --- | --- | --- | --- | --- | --- | --- | --- |
| 23 | 整理跟踪需求 | 15d? | 2007-01-24 A | 2007-04-29 A |  |  | 滕斌 [87.5%] |
| 24 | 完善测试过程及方法 | 16d? | 2007-01-26 A | 2007-05-18 A |  | start no earlier than 2007-01-22 | 滕斌 [81.2%] |
| 29 | 系统分析 | 3d? | 2007-02-01 A | 2007-02-28 A |  |  | 韩海东 [62.5%]; 汤成; 李翔 [25%]; 韩纪伟 |
| 93 | 经费本的充值查询功能完善 | 4d? | 2007-03-08 A | 2007-03-23 A |  | start no earlier than 2007-03-12 | 韩纪伟; 李翔 [50%] |
| 183 | **00、临时增补任务** | 70.88d? | 2007-04-02 A | 2007-07-09 A |  |  |  |
| 184 | 卡操作的DEMO程序 | 4.88d? | 2007-04-02 A | 2007-04-23 A |  | start no earlier than 2007-04-02 | 李翔 |
| 185 | 嵌入脚本的二次开发模式 | 4d? | 2007-04-02 A | 2007-04-10 A |  | start no earlier than 2007-04-02 | 李翔 |
| 186 | 回归测试bug修改 | 35d? | 2007-05-21 A | 2007-07-09 A |  | start no earlier than 2007-06-04 | 韩海东 [162.5%]; 韩纪伟; 汤成 [150%]; 闻剑; 李翔; 何林青 |
| 206 | **汉军系统** | 54d? | 2007-02-25 A | 2007-05-09 A |  |  |  |
| 208 | 修改、编写测试用例 | 0d? | 2007-03-01 A | 2007-04-09 A |  | start no earlier than 2007-03-01 | 滕斌 [25%] |
| 212 | **酬勤系统** | 12d? | 2007-05-18 | 2007-06-05 |  |  |  |
| 214 | 修改、编写测试用例 | 0d? | 2007-05-22 | 2007-05-23 |  | start no earlier than 2007-05-22 | 滕斌 |
| 228 | 编写测试用例 | 4d? | 2007-01-24 A | 2007-03-12 A | 227 |  | 滕斌 [25%] |
| 236 | 测试用例设计 | 2d? | 2007-05-14 A | 2007-06-11 A | 235 |  | 滕斌; 赵浪; 王家欢 [75%]; 郭莉莉 |
| 237 | 执行测试 | 36.8d? | 2007-01-25 A | 2007-07-09 | 236 | finish no earlier than 2007-06-15 | 滕斌; 赵浪 [125%]; 王家欢 [131.2%]; 郭莉莉 [137.5%] |
| 238 | 验证缺陷修改 | 2d? | 2007-06-07 A | 2007-06-08 A |  | start no earlier than 2007-06-11 | 滕斌 |
| 242 | 修改、编写测试用例 | 0d? | 2007-03-06 A | 2007-04-02 A |  | start no earlier than 2007-03-06 | 滕斌 [12.5%] |
| 253 | 业务熟悉 | 2d? | 2007-05-09 A | 2007-05-10 A |  | start no earlier than 2007-04-17 | 滕斌 |
| 268 | 回归测试 | 1d? | 2007-05-09 A | 2007-06-22 A | 267 |  | 滕斌 |
| 270 | 会议签到功能测试 | 6d? | 2007-01-31 A | 2007-06-17 A |  | start no earlier than 2007-01-30 | 滕斌 |
| 271 | 手持机系统测试 | 4d? | 2007-03-29 A | 2007-04-03 A |  | start no earlier than 2007-03-26 | 滕斌 |

Removed: 247 修改部分测试用例

Changed:

| ID | Task | Start | Finish | Duration | Complete | Total float | Predecessors | Other |
| --- | --- | --- | --- | --- | --- | --- | --- | --- |
| 1 | **一卡通产品开发计划** |  | 2007-05-21 → 2007-07-10 (+50d) | 104.53d? → 141d? | 0% → 97% |  |  | baseline finish 2007-05-09 → 2007-05-21 |
| 2 | **项目管理活动** |  | 2007-05-16 → 2007-06-19 (+34d) | 101.49d? → 126d? | 1% → 97% | 2.92d → 15d |  | baseline start 2007-01-31 → 2006-12-18; baseline finish 2007-05-09 → 2007-05-16 |
| 3 | 工作计划维护 | 2007-01-04 A → 2006-12-19 A (-16d) | 2007-03-14 → 2007-04-11 (+28d) | 19.38d? → 37d? | 5% → 65% | 48.46d → 64d |  | resources 韩海东 → 韩海东 [118.8%]; 滕斌; baseline start 2007-01-31 → 2007-01-04; baseline finish 2007-03-07 → 2007-03-14 |
| 4 | 周客户项目例会 | 2007-04-24 → 2006-12-19 A (-126d) | 2007-05-03 → 2007-06-19 A (+47d) | 7.5d → 125d | 0% → 100% | 11.67d → none |  | resources 韩海东 → 韩海东 [50%]; baseline start 2007-04-12 → 2007-04-24; baseline finish 2007-04-23 → 2007-05-03 |
| 5 | 周项目组内部例会 | 2007-05-15 → 2007-03-29 A (-47d) | 2007-05-16 → 2007-03-30 (-47d) |  | 0% → 80% | 2.92d → 72.75d |  | resources 韩海东 → 韩海东 [37.5%]; baseline start 2007-05-08 → 2007-05-15; baseline finish 2007-05-09 → 2007-05-16 |
| 6 | 月度述职报告会 | 2006-12-18 → 2007-01-04 A (+17d) | 2006-12-21 → 2007-06-05 A (+166d) | 3.5d → 104d | 0% → 100% | 100.9d → none |  | resources 韩海东 [140%] → 韩海东 [75%]; baseline start 2007-05-03 → 2006-12-18; baseline finish 2007-05-08 → 2006-12-21 |
| 7 | 工作周报 | 2007-05-03 → 2007-01-29 A (-94d) | 2007-05-15 → 2007-06-04 A (+20d) | 7.5d → 86d | 0% → 100% | 4.17d → none |  | resources 韩海东 → 韩海东 [37.5%]; baseline start 2007-04-23 → 2007-05-03; baseline finish 2007-05-03 → 2007-05-15 |
| 8 | 工作协调 | 2007-03-16 → 2006-12-18 A (-88d) | 2007-04-24 → 2007-06-11 A (+48d) | 25d? → 63d? | 0% → 100% | 19.17d → none |  | resources 韩海东 → 韩海东 [106.2%]; baseline start 2007-03-07 → 2007-03-16; baseline finish 2007-04-12 → 2007-04-24 |
| 9 | 配置管理 | 2007-03-23 → 2006-12-18 A (-95d) | 2007-04-05 → 2007-04-25 A (+20d) | 9.38d? → 9d? | 0% → 100% | 31.93d → none |  | resources 文档管理员 → 范露玫; 韩纪伟 [50%]; baseline start 2007-03-15 → 2007-03-23; baseline finish 2007-03-28 → 2007-04-05 |
| 10 | **项目开发活动** | 2006-12-18 A | 2007-05-21 → 2007-07-10 (+50d) | 104.53d? → 141d? | 0% → 97% |  |  | baseline finish 2007-05-09 → 2007-05-21 |
| 11 | **产品配套的完善** | 2006-12-18 → 2007-01-22 A (+35d) | 2007-03-23 → 2007-07-10 A (+109d) | 63.1d? → 116.88d? | 0% → 100% | 41.31d → none |  | baseline finish 2007-03-15 → 2007-03-23 |
| 12 | **完善产品开发流程** | 2007-03-06 → 2007-01-25 A (-40d) | 2007-03-23 → 2007-05-30 A (+68d) | 13d? → 85d? | 0% → 100% | 41.31d → none |  | baseline start 2007-02-26 → 2007-03-06; baseline finish 2007-03-15 → 2007-03-23 |
| 13 | 版本定义和发布流程 | 2007-03-13 A | 2007-03-15 → 2007-04-03 A (+19d) | 2d? → 0d? | 0% → 100% | 47.31d → none |  | resources 文档管理员 → 范露玫 [25%]; baseline start 2007-03-05 → 2007-03-13; baseline finish 2007-03-07 → 2007-03-15 |
| 14 | 产品的需求跟踪方法和流程-客户化、产品需求 | 2007-03-15 → 2007-01-25 A (-49d) | 2007-03-19 → 2007-05-30 A (+72d) | 2d? → 15d? | 0% → 100% | 45.31d → none |  | constraint none → start no earlier than 2007-01-22; resources 文档管理员 → 范露玫; 韩海东 [68.8%]; baseline start 2007-03-07 → 2007-03-15; baseline finish 2007-03-09 → 2007-03-19 |
| 15 | 定义changelog规范和流程 | 2007-03-19 A | 2007-03-21 → 2007-04-03 A (+13d) | 2d? → 0d? | 0% → 100% | 43.31d → none |  | resources 文档管理员 → 范露玫 [25%]; baseline start 2007-03-09 → 2007-03-19; baseline finish 2007-03-13 → 2007-03-21 |
| 16 | 制定系统上线检查表-checklist | 2007-03-06 A | 2007-03-13 A | 5d? → 0d? | 0% → 100% | 49.31d → none |  | resources 文档管理员 → 范露玫; baseline start 2007-02-26 → 2007-03-06; baseline finish 2007-03-05 → 2007-03-13 |
| 17 | 制定设备签收维修变更的流程 | 2007-03-21 A | 2007-03-23 → 2007-04-03 A (+11d) | 2d? → 0d? | 0% → 100% | 41.31d → none |  | resources 文档管理员 → 范露玫 [25%]; baseline start 2007-03-13 → 2007-03-21; baseline finish 2007-03-15 → 2007-03-23 |
| 18 | **完善产品配套文档** | 2006-12-18 → 2007-01-22 A (+35d) | 2007-03-06 → 2007-07-10 A (+126d) | 50.1d? → 116.88d? | 0% → 100% | 54.31d → none |  | baseline finish 2007-02-26 → 2007-03-06 |
| 19 | 完善产品使用手册 | 2006-12-18 → 2007-01-22 A (+35d) | 2006-12-30 → 2007-07-10 A (+192d) | 10d? → 27d? | 0% → 100% | 94.4d → none |  | constraint none → start no earlier than 2007-01-22; resources 文档管理员 → 范露玫; baseline finish 2007-01-01 → 2006-12-30 |
| 20 | 完善产品安装维护手册 | 2007-01-10 → 2007-03-17 A (+66d) | 2007-01-24 → 2007-03-19 A (+54d) | 10d? → 1d? | 0% → 100% | 77.97d → none | none → 19 | resources 文档管理员 → 范露玫 [2.1%]; baseline start 2007-01-09 → 2007-01-10; baseline finish 2007-01-23 → 2007-01-24 |
| 21 | 完善各种产品开发文档 | 2007-01-30 A | 2007-02-13 → 2007-03-19 A (+34d) | 10d? → 1d? | 0% → 100% | 64.31d → none |  | resources 文档管理员 → 范露玫 [2.1%]; baseline start 2007-01-29 → 2007-01-30; baseline finish 2007-02-12 → 2007-02-13 |
| 22 | 完善各种产品实施文档 | 2007-02-13 → 2007-02-25 A (+12d) | 2007-03-06 → 2007-02-25 A (-9d) | 10d? → 1d? | 0% → 100% | 54.31d → none |  | resources 文档管理员 → 韩海东 [6.2%]; baseline start 2007-02-12 → 2007-02-13; baseline finish 2007-02-26 → 2007-03-06 |
| 25 | **新系统对接** | 2006-12-31 → 2006-12-18 A (-13d) | 2007-05-18 → 2007-06-06 (+19d) | 91.93d? → 116.8d? | 0% → 99% | 1d → 24.2d |  | baseline start 2007-01-02 → 2006-12-31; baseline finish 2007-05-04 → 2007-05-18 |
| 26 | **13、水控管理系统对接** | 2006-12-31 → 2006-12-18 A (-13d) | 2007-05-18 → 2007-04-30 A (-18d) | 91.93d? → 89d? | 0% → 100% | 1d → none |  | baseline start 2007-01-02 → 2006-12-31; baseline finish 2007-05-04 → 2007-05-18 |
| 27 | **三九水控的对接** | 2006-12-31 → 2006-12-18 A (-13d) | 2007-05-18 → 2007-04-30 A (-18d) | 91.93d? → 89d? | 0% → 100% | 1d → none |  | baseline start 2007-01-02 → 2006-12-31; baseline finish 2007-04-17 → 2007-05-18 |
| 28 | **脱机模式的对接** | 2006-12-31 → 2006-12-18 A (-13d) | 2007-03-16 → 2007-03-18 A (+2d) | 47.26d? → 59d? | 0% → 100% | 1d → none |  | baseline start 2007-01-02 → 2006-12-31; baseline finish 2007-03-08 → 2007-03-16 |
| 30 | 写卡动态库的修改 | 2006-12-31 → 2006-12-21 A (-10d) | 2007-01-05 → 2007-02-28 A (+54d) | 2d? → 22d? | 0% → 100% | 43.26d → none |  | resources 李翔 → 李翔 [87.5%]; baseline start 2007-01-02 → 2006-12-31; baseline finish 2007-01-04 → 2007-01-05 |
| 31 | 钱包的转帐 | 2007-01-05 → 2006-12-18 A (-18d) | 2007-01-08 → 2007-03-05 A (+56d) | 1d? → 25d? | 0% → 100% | 43.26d → none | 30 → none | resources 李翔 → 李翔 [87.5%]; baseline start 2007-01-04 → 2007-01-05; baseline finish 2007-01-05 → 2007-01-08 |
| 32 | 流水的采集 | 2007-03-14 → 2007-03-17 A (+3d) | 2007-03-16 → 2007-03-18 A (+2d) | 2d? → 1d? | 0% → 100% | 1d → none |  | resources 韩纪伟 → 韩纪伟 [2.1%]; baseline start 2007-03-06 → 2007-03-14; baseline finish 2007-03-08 → 2007-03-16 |
| 33 | 帐务的处理 | 2007-01-08 → 2006-12-27 A (-12d) | 2007-01-10 → 2007-03-01 A (+50d) | 2d? → 9d? | 0% → 100% | 43.26d → none |  | resources 李翔 → 李翔 [62.5%]; baseline start 2007-01-05 → 2007-01-08; baseline finish 2007-01-09 → 2007-01-10 |
| 34 | **联机模式的对接** | 2007-03-16 → 2007-03-19 A (+3d) | 2007-05-18 → 2007-04-30 A (-18d) | 44.67d? → 30d? | 0% → 100% | 1d → none |  | baseline start 2007-03-21 → 2007-03-16; baseline finish 2007-04-17 → 2007-05-18 |
| 35 | 对于自增长编号的规范0开始or1开始 | 2007-03-16 → 2007-03-19 A (+3d) | 2007-03-19 A | 1d? → 0d? | 0% → 100% | 1d → none |  | baseline start 2007-03-21 → 2007-03-16; baseline finish 2007-03-28 → 2007-03-19 |
| 36 | 硬件支持 | 2007-03-19 → 2007-03-20 A (+1d) | 2007-04-10 → 2007-03-23 A (-18d) | 1d? → 0d? | 0% → 100% | 1d → none |  | baseline start 2007-03-28 → 2007-03-19; baseline finish 2007-03-29 → 2007-04-10 |
| 37 | 充值扣款选择钱包 | 2007-05-15 → 2007-04-30 A (-15d) | 2007-05-16 → 2007-04-30 A (-16d) | 1d? → 0d? | 0% → 100% | 1d → none |  | resources 韩纪伟 → 韩纪伟 [50%]; baseline start 2007-04-12 → 2007-05-15; baseline finish 2007-04-13 → 2007-05-16 |
| 38 | 发卡选择打开几个钱包 | 2007-05-16 → 2007-04-30 A (-16d) | 2007-05-17 → 2007-04-30 A (-17d) | 1d? → 0d? | 0% → 100% | 1d → none |  | baseline start 2007-04-13 → 2007-05-16; baseline finish 2007-04-16 → 2007-05-17 |
| 39 | 改造卡号和钱包号查找帐户的功能 | 2007-05-17 → 2007-04-30 A (-17d) | 2007-05-18 → 2007-04-30 A (-18d) | 1d? → 0d? | 0% → 100% | 1d → none |  | baseline start 2007-04-16 → 2007-05-17; baseline finish 2007-04-17 → 2007-05-18 |
| 40 | 凯路水控的对接 | 2007-05-04 → 2007-01-10 A (-114d) | 2007-05-15 → 2007-01-17 A (-118d) | 5d? → 4.88d? | 0% → 100% | 4.33d → none |  | constraint none → start no earlier than 2007-01-10; resources 汤成 → 李翔; baseline start 2007-04-27 → 2007-05-04; baseline finish 2007-05-04 → 2007-05-15 |
| 41 | **11、门禁管理系统对接** | 2007-01-12 → 2006-12-21 A (-22d) | 2007-04-10 → 2007-06-04 A (+55d) | 57.26d? → 111.12d? | 0% → 100% | 24.17d → none |  | baseline start 2007-01-11 → 2007-01-12; baseline finish 2007-04-20 → 2007-04-10 |
| 42 | 汉军门禁的对接 | 2007-01-12 → 2006-12-21 A (-22d) | 2007-01-19 → 2007-05-14 A (+115d) | 5d? → 45d? | 0% → 100% | 24.17d → none |  | resources 汤成 → 汤成 [112.5%]; baseline start 2007-01-11 → 2007-01-12; baseline finish 2007-01-18 → 2007-01-19 |
| 43 | 酬勤门禁的对接 | 2007-03-16 → 2007-06-04 A (+80d) | 2007-04-10 → 2007-06-04 A (+55d) | 10d? → 0d? | 0% → 100% | 29.17d → none |  | baseline start 2007-04-03 → 2007-03-16; baseline finish 2007-04-20 → 2007-04-10 |
| 44 | 12、通道管理系统对接 | 2007-02-27 → 2007-06-04 (+97d) | 2007-03-15 → 2007-06-04 (+81d) | 10d? → 0d? |  | 29.17d → 25.88d |  | constraint none → start no earlier than 2007-06-04; baseline start 2007-02-19 → 2007-02-27; baseline finish 2007-03-07 → 2007-03-15 |
| 45 | 51、机房收费系统对接 | 2007-02-07 → 2007-04-20 A (+72d) | 2007-02-12 → 2007-05-11 A (+88d) | 3d? → 0d? | 0% → 100% | 54.71d → none | 130 → none | baseline start 2007-02-06 → 2007-02-07; baseline finish 2007-02-09 → 2007-02-12 |
| 46 | 52、自助复印系统对接 | 2007-03-22 → 2007-04-10 A (+19d) | 2007-03-29 → 2007-04-20 A (+22d) | 5d? → 0d? | 0% → 100% | 37.21d → none |  | resources 李翔 → 李翔 [50%]; baseline start 2007-03-09 → 2007-03-22; baseline finish 2007-03-16 → 2007-03-29 |
| 47 | 53、自助洗衣系统对接 | 2007-03-29 A | 2007-04-05 → 2007-04-06 A (+1d) | 5d? → 0d? | 0% → 100% | 31.3d → none |  | resources 李翔 → 李翔 [12.5%]; baseline start 2007-03-16 → 2007-03-29; baseline finish 2007-03-27 → 2007-04-05 |
| 48 | 54、自助照相系统对接 | 2007-04-05 A | 2007-04-12 → 2007-04-16 A (+4d) | 5d? → 0d? | 0% → 100% | 27.21d → none |  | baseline start 2007-03-27 → 2007-04-05; baseline finish 2007-04-03 → 2007-04-12 |
| 49 | 55、电子寄存柜系统对接 | 2007-04-12 A | 2007-04-20 → 2007-04-13 A (-7d) | 5d? → 0d? | 0% → 100% | 20.88d → none |  | resources 李翔 → 李翔 [50%]; baseline start 2007-04-03 → 2007-04-12; baseline finish 2007-04-10 → 2007-04-20 |
| 50 | 指纹考勤的支持 | 2007-03-08 → 2007-05-08 A (+61d) | 2007-03-22 → 2007-06-06 (+76d) | 10d? → 0d? |  | 42.21d → 24.2d |  | baseline start 2007-02-23 → 2007-03-08; baseline finish 2007-03-09 → 2007-03-22 |
| 51 | **现有系统的完善** | 2006-12-18 A | 2007-05-21 → 2007-07-09 (+49d) | 104.53d? → 140d? | 0% → 98% | 0d → 1d |  | baseline finish 2007-05-09 → 2007-05-21 |
| 52 | **美工设计** | 2007-01-04 A | 2007-01-16 → 2007-03-18 A (+61d) | 9d? → 47d? | 0% → 100% | 83.53d → none |  | baseline start 2007-01-01 → 2007-01-04; baseline finish 2007-01-11 → 2007-01-16 |
| 53 | 新版的卡面设计 | 2007-01-04 A | 2007-01-08 → 2007-03-09 A (+60d) | 3d? → 0d? | 0% → 100% | 83.53d → none | none → 55 | baseline start 2007-01-01 → 2007-01-04; baseline finish 2007-01-03 → 2007-01-08 |
| 54 | c/s架构程序的美工设计 | 2007-01-09 → 2007-03-17 A (+67d) | 2007-01-11 → 2007-03-18 A (+66d) | 3d? → 1d? | 0% → 100% | 83.53d → none |  | constraint none → start no earlier than 2007-01-11; resources 奚嘉敏 → 奚嘉敏 [2.1%]; baseline start 2007-01-04 → 2007-01-09; baseline finish 2007-01-08 → 2007-01-11 |
| 55 | c/s架构的安装封面 | 2007-01-12 → 2007-01-10 A (-2d) | 2007-01-16 → 2007-01-24 A (+8d) | 3d? → 8d? | 0% → 100% | 83.53d → none | 54 → none | constraint none → start no earlier than 2007-01-10; baseline start 2007-01-09 → 2007-01-12; baseline finish 2007-01-11 → 2007-01-16 |
| 56 | **01、拍照打卡系统完善** | 2007-01-15 → 2006-12-21 A (-25d) | 2007-02-12 → 2007-05-23 A (+100d) | 20d? → 104d? | 0% → 100% | 16.76d → none |  | baseline start 2007-01-12 → 2007-01-15; baseline finish 2007-02-09 → 2007-02-12 |
| 57 | 拍照系统改版 | 2007-01-15 → 2006-12-21 A (-25d) | 2007-01-29 → 2007-05-23 A (+114d) | 10d? → 1d? | 0% → 100% | 16.76d → none | 66 → none | constraint start no earlier than 2007-01-01 → none; resources 韩纪伟 → 韩纪伟 [75%]; baseline start 2007-01-12 → 2007-01-15; baseline finish 2007-01-26 → 2007-01-29 |
| 58 | 卡片打印系统改版 | 2007-01-29 → 2007-01-22 A (-7d) | 2007-02-12 → 2007-03-20 A (+36d) | 10d? → 13d? | 0% → 100% | 16.76d → none |  | baseline start 2007-01-26 → 2007-01-29; baseline finish 2007-02-09 → 2007-02-12 |
| 59 | **04、会议签到管理系统** | 2007-01-05 → 2007-01-10 A (+5d) | 2007-03-01 → 2007-06-03 A (+94d) | 34.02d? → 97.88d? | 0% → 100% | 35.93d → none |  | baseline start 2007-01-04 → 2007-01-05 |
| 60 | 实现脱机会议签到 | 2007-01-05 → 2007-01-10 A (+5d) | 2007-01-26 → 2007-06-03 A (+128d) | 15d? → 11d? | 0% → 100% | 35.93d → none | 69 → none | constraint start no earlier than 2007-01-01 → start no earlier than 2007-01-10; resources 何林青 → 何林青 [150%]; baseline start 2007-01-04 → 2007-01-05; baseline finish 2007-01-25 → 2007-01-26 |
| 61 | 整合海事大学的需求 | 2007-03-01 A | 2007-03-01 A |  | 0% → 100% | 57.4d → none |  |  |
| 62 | **11、门禁管理系统完善** | 2006-12-18 → 2006-12-21 A (+3d) | 2007-03-23 → 2007-05-16 A (+54d) | 63.86d? → 99d? | 0% → 100% | 20.86d → none |  | baseline finish 2007-04-24 → 2007-03-23 |
| 63 | 总体设计 | 2006-12-18 → 2006-12-21 A (+3d) | 2006-12-21 → 2007-04-02 A (+102d) | 3.33d? → 6d? | 0% → 100% | 20.86d → none |  | resources 韩海东; 韩纪伟; 汤成 → 韩海东 [37.5%]; 韩纪伟; 汤成 |
| 64 | 通道机的对接设计 | 2006-12-21 → 2007-01-25 A (+35d) | 2006-12-22 → 2007-01-26 A (+35d) | 1.67d? → 0d? | 0% → 100% | 20.86d → none |  |  |
| 65 | 开关门状态的监控 | 2006-12-26 → 2007-01-24 A (+29d) | 2006-12-28 → 2007-01-30 A (+33d) | 1.5d? → 0d? | 0% → 100% | 24.17d → none | 64, 80 → 64 |  |
| 66 | 前台界面功能整改 | 2006-12-29 → 2007-03-27 A (+88d) | 2007-01-15 → 2007-04-26 A (+101d) | 10d? → 14d? | 0% → 100% | 16.76d → none | 64, 79 → none | baseline finish 2007-01-12 → 2007-01-15 |
| 67 | 重复卡检查报警-监控 | 2006-12-28 → 2007-02-13 A (+47d) | 2006-12-31 → 2007-02-25 A (+56d) | 3d? → 1d? | 0% → 100% | 35.93d → none |  | resources 何林青 → 何林青 [6.2%]; baseline finish 2007-01-02 → 2006-12-31 |
| 68 | 门未关报警-监控 | 2006-12-31 → 2007-02-25 A (+56d) | 2007-01-04 → 2007-02-25 A (+52d) |  | 0% → 100% | 35.93d → none |  | resources 何林青 → 何林青 [6.2%]; baseline start 2007-01-02 → 2006-12-31; baseline finish 2007-01-03 → 2007-01-04 |
| 69 | 外力破坏报警-监控 | 2007-01-04 → 2007-02-25 A (+52d) | 2007-01-05 → 2007-02-25 A (+51d) |  | 0% → 100% | 35.93d → none |  | resources 何林青 → 何林青 [6.2%]; baseline start 2007-01-03 → 2007-01-04; baseline finish 2007-01-04 → 2007-01-05 |
| 70 | 时间段排程设计 | 2006-12-21 → 2007-02-13 A (+54d) | 2006-12-21 → 2007-02-14 A (+55d) | 0.67d? → 0d? | 0% → 100% | 39d → none |  |  |
| 71 | 刷卡、密码双重认证 | 2007-03-16 → 2007-05-10 A (+55d) | 2007-03-20 → 2007-05-11 A (+52d) | 1d? → 0d? | 0% → 100% | 40.67d → none |  | baseline start 2007-03-07 → 2007-03-16; baseline finish 2007-03-09 → 2007-03-20 |
| 72 | 指纹、虹膜多重认证 | 2007-03-20 → 2007-05-14 A (+55d) | 2007-03-21 → 2007-05-14 A (+54d) | 0.5d? → 0d? | 0% → 100% | 40.67d → none |  | baseline start 2007-03-09 → 2007-03-20; baseline finish 2007-03-13 → 2007-03-21 |
| 73 | 反潜回功能的设计 | 2007-03-21 → 2007-05-14 A (+54d) | 2007-03-21 → 2007-05-14 A (+54d) | 0.5d? → 0d? | 0% → 100% | 40.67d → none |  | baseline start 2007-03-30 → 2007-03-21; baseline finish 2007-04-12 → 2007-03-21 |

| ID | Task | Start | Finish | Duration | Complete | Total float | Predecessors | Other |
| --- | --- | --- | --- | --- | --- | --- | --- | --- |
| 74 | 路线功能的设计 | 2007-03-21 → 2007-05-15 A (+55d) | 2007-03-22 → 2007-05-15 A (+54d) | 0.5d? → 0d? | 0% → 100% | 40.67d → none |  | baseline start 2007-04-13 → 2007-03-21; baseline finish 2007-04-20 → 2007-03-22 |
| 75 | 区域功能的设计 | 2007-03-22 → 2007-05-15 A (+54d) | 2007-03-22 → 2007-05-15 A (+54d) | 0.5d? → 0d? | 0% → 100% | 40.67d → none |  | baseline start 2007-04-20 → 2007-03-22; baseline finish 2007-04-23 → 2007-03-22 |
| 76 | 主副卡的设计 | 2007-03-22 → 2007-05-16 A (+55d) | 2007-03-23 → 2007-05-16 A (+54d) | 0.5d? → 0d? | 0% → 100% | 40.67d → none |  | baseline start 2007-04-23 → 2007-03-22; baseline finish 2007-04-24 → 2007-03-23 |
| 77 | 胁迫码的设计 | 2007-03-23 → 2007-05-16 A (+54d) | 2007-03-23 → 2007-05-16 A (+54d) | 0.5d? → 0d? | 0% → 100% | 40.67d → none |  | baseline start 2007-04-24 → 2007-03-23; baseline finish 2007-04-24 → 2007-03-23 |
| 78 | **02、综合管理系统完善** | 2006-12-18 A | 2007-05-21 → 2007-06-08 (+18d) | 104.4d? → 118.88d? | 0% → 96% | 0d → 22d |  | baseline finish 2007-05-09 → 2007-05-21 |
| 79 | 业务重新命名 | 2006-12-26 → 2007-04-20 A (+115d) | 2006-12-29 → 2007-05-02 A (+124d) | 2.5d? → 0d? | 0% → 100% | 16.76d → none |  | resources 韩海东; 韩纪伟 → 韩海东 [25%]; 韩纪伟 [25%] |
| 80 | 业务分支合并 | 2006-12-25 A | 2006-12-26 → 2007-06-06 (+162d) | 1.6d? → 21d? | 0% → 95% | 16.76d → 24d |  | resources 韩纪伟; 汤成; 何林青; 李翔; 韩海东 → 韩纪伟 [93.8%]; 汤成; 何林青 [50%]; 李翔 [50%]; 韩海东 [50%] |
| 81 | **drtp、gcc、bcc+bu的升级** | 2007-05-02 → 2007-04-09 A (-23d) | 2007-05-04 → 2007-05-23 A (+19d) | 1.67d? → 33d? | 0% → 100% | 11.33d → none |  | baseline start 2007-03-30 → 2007-05-02; baseline finish 2007-04-03 → 2007-05-04 |
| 82 | bcc+bu架构的升级 | 2007-05-02 → 2007-04-09 A (-23d) | 2007-05-03 → 2007-05-23 A (+20d) | 0.83d? → 5d? | 0% → 100% | 12.17d → none |  | resources 汤成 [60%] → 汤成 [50%]; 闻剑; baseline start 2007-03-30 → 2007-05-02; baseline finish 2007-04-02 → 2007-05-03 |
| 83 | 多个bcc的改造 | 2007-05-03 → 2007-04-18 A (-15d) | 2007-05-04 A | 0.83d? → 7d? | 0% → 100% | 11.33d → none |  | resources 汤成 [60%] → 汤成 [60%]; 闻剑; baseline start 2007-04-02 → 2007-05-03; baseline finish 2007-04-03 → 2007-05-04 |
| 84 | 照片库和客户表的整合完善 | 2007-04-11 → 2007-05-28 A (+47d) | 2007-04-12 → 2007-05-29 A (+47d) | 1d? → 0d? | 0% → 100% | 0d → none |  | baseline start 2007-03-14 → 2007-04-11; baseline finish 2007-03-15 → 2007-04-12 |
| 85 | 增加结算科目的划拨业务 | 2007-04-12 → 2007-03-07 A (-36d) | 2007-04-13 → 2007-03-26 A (-18d) | 1d? → 6d? | 0% → 100% | 0d → none |  | resources 韩纪伟; 汤成 → 韩纪伟; 李翔 [75%]; baseline start 2007-03-15 → 2007-04-12; baseline finish 2007-03-16 → 2007-04-13 |
| 86 | 写卡失败机制的完善-借用字段 | 2006-12-26 → 2006-12-28 A (+2d) | 2006-12-31 → 2007-01-12 A (+12d) | 5d? → 4d? | 0% → 100% | 43.26d → none | 80 → none | resources 李翔 → 李翔 [87.5%]; baseline finish 2007-01-02 → 2006-12-31 |
| 87 | 修改直接取帐户表部门、名字的问题 | 2007-04-13 → 2007-03-09 A (-35d) | 2007-04-17 → 2007-03-27 A (-21d) | 1.5d? → 5d? | 0% → 100% | 0d → none |  | resources 韩纪伟; 汤成 → 韩纪伟; 李翔 [50%]; baseline start 2007-03-16 → 2007-04-13; baseline finish 2007-03-19 → 2007-04-17 |
| 88 | **设备参数的更改记录** | 2007-04-17 → 2007-03-27 A (-21d) | 2007-04-18 → 2007-04-17 A (-1d) | 1.33d? → 14.83d? | 0% → 100% | 0d → none |  | baseline start 2007-03-19 → 2007-04-17; baseline finish 2007-03-21 → 2007-04-18 |
| 89 | 搭伙费比例 | 2007-04-17 → 2007-03-27 A (-21d) | 2007-04-17 → 2007-04-16 A (-1d) | 0.33d? → 0d? | 0% → 100% | 0d → none |  | resources 汤成; 李翔; 韩纪伟 → 汤成 [37.5%]; 李翔; 韩纪伟 [37.5%]; baseline start 2007-03-19 → 2007-04-17; baseline finish 2007-03-20 → 2007-04-17 |
| 90 | 单次、累积大额参数 | 2007-04-17 → 2007-04-16 A (-1d) | 2007-04-18 → 2007-04-16 A (-2d) | 0.33d? → 0d? | 0% → 100% | 0d → none |  | resources 韩纪伟; 汤成; 李翔 → 韩纪伟 [37.5%]; 汤成 [37.5%]; 李翔; baseline start 2007-03-20 → 2007-04-17; baseline finish 2007-03-20 → 2007-04-18 |
| 91 | 卡权限控制参数 | 2007-04-18 → 2007-04-16 A (-2d) | 2007-04-18 → 2007-04-16 A (-2d) | 0.33d? → 0d? | 0% → 100% | 0d → none |  | resources 韩纪伟; 汤成; 李翔 → 韩纪伟 [37.5%]; 汤成; 李翔; baseline start 2007-03-20 → 2007-04-18; baseline finish 2007-03-20 → 2007-04-18 |
| 92 | 设备更换的考虑 | 2007-04-18 → 2007-04-17 A (-1d) | 2007-04-18 → 2007-04-17 A (-1d) | 0.33d? → 0d? | 0% → 100% | 0d → none |  | resources 韩纪伟; 汤成; 李翔 → 韩纪伟 [37.5%]; 汤成; 李翔; baseline start 2007-03-20 → 2007-04-18; baseline finish 2007-03-21 → 2007-04-18 |
| 94 | 补办校园卡的收费选项、容易出错 | 2007-04-18 → 2007-03-12 A (-37d) | 2007-04-19 → 2007-03-23 A (-27d) | 0.83d? → 1d? | 0% → 100% | 0d → none | 88 → 93 | resources 韩纪伟 [60%] → 韩纪伟 [56.2%]; baseline start 2007-03-21 → 2007-04-18; baseline finish 2007-03-22 → 2007-04-19 |
| 95 | 商户结构调整的生效问题 | 2006-12-29 → 2007-05-08 A (+130d) | 2006-12-31 → 2007-05-17 A (+137d) | 2d? → 0d? | 0% → 100% | 81.43d → none |  | resources 韩海东 → 韩海东 [50%]; baseline finish 2007-01-02 → 2006-12-31 |
| 96 | 设备商户的分配的不同时间段判断有问题 | 2007-01-19 → 2007-04-30 A (+101d) | 2007-01-23 → 2007-05-16 A (+113d) | 2d? → 0d? | 0% → 100% | 68.93d → none |  | resources 汤成 → 汤成 [50%]; baseline start 2007-01-18 → 2007-01-19; baseline finish 2007-01-22 → 2007-01-23 |
| 97 | 数据库的备份方案 | 2007-01-23 → 2007-04-27 A (+94d) | 2007-01-25 → 2007-06-08 A (+134d) | 2.5d? → 6d? | 0% → 100% | 68.93d → none | 96 → none | constraint none → start no earlier than 2007-04-27; resources 韩海东; 汤成 → 韩海东; 汤成 [40%]; 闻剑; baseline start 2007-01-22 → 2007-01-23; baseline finish 2007-01-24 → 2007-01-25 |
| 98 | 增加新生卡类别，区别正式卡 | 2007-04-19 → 2007-03-26 A (-24d) | 2007-04-20 → 2007-04-09 A (-11d) |  | 0% → 100% | 0d → none |  | resources 汤成; 韩纪伟 → 汤成 [50%]; 韩纪伟 [25%]; baseline start 2007-03-22 → 2007-04-19; baseline finish 2007-03-23 → 2007-04-20 |
| 99 | 前后台功能的整体美化和修改 | 2007-01-25 → 2007-05-08 A (+103d) | 2007-01-29 → 2007-05-09 A (+100d) |  | 0% → 100% | 68.93d → none |  | was named 新生换卡的3000状态的完善; resources 汤成 → 汤成 [40%]; 韩纪伟; baseline start 2007-01-24 → 2007-01-25; baseline finish 2007-01-26 → 2007-01-29 |
| 100 | 补助功能的查询和下发错误的处理 | 2007-04-20 → 2007-04-10 A (-10d) | 2007-04-23 → 2007-04-10 A (-13d) | 1d? → 0d? | 0% → 100% | 0d → none |  | resources 韩纪伟; 汤成 → 韩纪伟 [12.5%]; 汤成 [50%]; baseline start 2007-03-23 → 2007-04-20; baseline finish 2007-03-26 → 2007-04-23 |
| 101 | 授权卡的改造和业务调整 | 2007-01-10 A | 2007-01-17 → 2007-01-29 A (+12d) | 5d? → 13d? | 0% → 100% | 54.83d → none | 33 → none | constraint none → start no earlier than 2007-01-08; resources 李翔 → 李翔 [75%]; 汤成 [50%]; baseline start 2007-01-09 → 2007-01-10; baseline finish 2007-01-16 → 2007-01-17 |
| 102 | 卡片密钥体系的设计 | 2007-01-17 → 2007-01-30 A (+13d) | 2007-01-17 → 2007-05-15 A (+118d) | 0d? → 1d? | 0% → 100% | 54.83d → none |  | resources 李翔 → 李翔 [50%]; baseline start 2007-01-16 → 2007-01-17; baseline finish 2007-01-16 → 2007-01-17 |
| 103 | **报表的完善** | 2007-02-12 → 2006-12-18 A (-56d) | 2007-03-01 → 2007-06-08 A (+99d) | 8d? → 118.88d? | 0% → 100% | 16.76d → none | 56 → none | baseline start 2007-02-09 → 2007-02-12; baseline finish 2007-02-21 → 2007-03-01 |
| 104 | 增加餐次报表和设置功能 | 2007-02-12 → 2007-02-08 A (-4d) | 2007-02-14 → 2007-02-11 A (-3d) | 2.5d? → 0.88d? | 0% → 100% | 16.76d → none |  | constraint none → start no earlier than 2007-01-08; resources 韩海东; 韩纪伟 → 韩海东 [3.1%]; 韩纪伟 [2.1%]; baseline start 2007-02-09 → 2007-02-12; baseline finish 2007-02-13 → 2007-02-14 |
| 105 | 完善资产负债表-修改科目 | 2007-02-14 → 2006-12-18 A (-58d) | 2007-02-25 → 2007-04-18 A (+52d) | 1.5d? → 2d? | 0% → 100% | 16.76d → none | 104 → none | resources 韩海东; 韩纪伟 → 韩海东 [16.7%]; 韩纪伟 [62.5%]; baseline start 2007-02-13 → 2007-02-14; baseline finish 2007-02-15 → 2007-02-25 |
| 106 | 报表格式的统一修改 | 2007-02-25 → 2007-01-12 A (-44d) | 2007-02-27 → 2007-06-08 A (+101d) |  | 0% → 100% | 16.76d → none | 105 → none | baseline start 2007-02-15 → 2007-02-25; baseline finish 2007-02-19 → 2007-02-27 |
| 107 | 支持不同种类的打印机 | 2007-02-27 → 2007-03-17 A (+18d) | 2007-03-01 → 2007-03-18 A (+17d) | 2d? → 1d? | 0% → 100% | 16.76d → none |  | resources 韩纪伟 → 韩纪伟 [2.1%]; baseline start 2007-02-19 → 2007-02-27; baseline finish 2007-02-21 → 2007-03-01 |
| 108 | **帐务模块的调整** | 2007-04-23 → 2007-03-26 A (-28d) | 2007-04-26 → 2007-04-24 A (-2d) | 3d? → 22d? | 0% → 100% | 0d → none |  | baseline start 2007-03-26 → 2007-04-23; baseline finish 2007-03-29 → 2007-04-26 |
| 109 | 前台配置界面 | 2007-04-23 → 2007-03-26 A (-28d) | 2007-04-26 → 2007-04-23 A (-3d) | 3d? → 8d? | 0% → 100% | 0d → none |  | resources 韩纪伟 → 韩纪伟; 闻剑 [50%]; baseline start 2007-03-26 → 2007-04-23; baseline finish 2007-03-29 → 2007-04-26 |
| 110 | 后台支持配置的增删改查 | 2007-04-23 → 2007-03-26 A (-28d) | 2007-04-24 → 2007-04-20 A (-4d) | 0.83d? → 10d? | 0% → 100% | 1.17d → none |  | resources 汤成 [60%] → 闻剑; baseline start 2007-03-26 → 2007-04-23; baseline finish 2007-03-26 → 2007-04-24 |
| 111 | 后台搭伙费部分改造 | 2007-04-24 → 2007-04-20 A (-4d) | 2007-04-25 → 2007-04-24 A (-1d) |  | 0% → 100% | 1.17d → none |  | resources 汤成 → 闻剑; baseline start 2007-03-26 → 2007-04-24; baseline finish 2007-03-27 → 2007-04-25 |
| 112 | **科目和交易类型的设置** | 2007-03-01 → 2007-02-09 A (-20d) | 2007-04-11 → 2007-05-29 A (+48d) | 29.76d? → 72.76d? | 0% → 100% | 0d → none |  | baseline start 2007-02-21 → 2007-03-01; baseline finish 2007-03-14 → 2007-04-11 |
| 113 | 后台支持交易代码和科目的是否可用状态 | 2007-04-10 → 2007-05-29 A (+49d) | 2007-04-11 → 2007-05-29 A (+48d) | 1d? → 0d? | 0% → 100% | 0d → none |  | resources 汤成 → 汤成 [25%]; baseline start 2007-03-13 → 2007-04-10; baseline finish 2007-03-14 → 2007-04-11 |
| 114 | 增加二级科目的设置 | 2007-03-01 → 2007-02-09 A (-20d) | 2007-03-02 → 2007-04-30 A (+59d) | 1.67d? → 10d? | 0% → 100% | 28.1d → none |  | resources 汤成; 韩海东; 韩纪伟 → 汤成; 韩海东 [106.2%]; 韩纪伟 [37.5%]; baseline start 2007-02-21 → 2007-03-01; baseline finish 2007-02-22 → 2007-03-02 |
| 115 | 多数业务的调整 | 2007-03-15 → 2007-04-02 A (+18d) | 2007-04-03 → 2007-04-02 A (-1d) | 3d? → 0d? | 0% → 100% | 6.5d → none |  | baseline start 2007-03-07 → 2007-03-15; baseline finish 2007-03-12 → 2007-04-03 |
| 116 | **前台动态显示字段** | 2007-04-26 → 2007-03-06 A (-51d) | 2007-05-08 → 2007-05-23 (+15d) | 8d? → 57d? | 0% → 99% | 0d → 33.5d |  | baseline start 2007-03-29 → 2007-04-26; baseline finish 2007-04-10 → 2007-05-08 |
| 117 | 查询界面的改造 | 2007-04-26 → 2007-04-25 A (-1d) | 2007-05-01 → 2007-05-16 A (+15d) | 3d? → 0d? | 0% → 100% | 0d → none |  | resources 韩纪伟 → 韩纪伟 [50%]; baseline start 2007-03-29 → 2007-04-26; baseline finish 2007-04-03 → 2007-05-01 |
| 118 | 增加维护界面 | 2007-05-01 → 2007-05-17 (+16d) | 2007-05-08 → 2007-05-23 (+15d) | 5d? → 0d? |  | 0d → 33.5d |  | resources 韩纪伟 → 韩纪伟 [50%]; baseline start 2007-04-03 → 2007-05-01; baseline finish 2007-04-10 → 2007-05-08 |
| 119 | 检查接口，入库 | 2007-04-26 → 2007-03-06 A (-51d) | 2007-04-27 → 2007-03-09 A (-49d) | 1d? → 4d? | 0% → 100% | 7d → none |  | resources 文档管理员 → 范露玫; baseline start 2007-03-29 → 2007-04-26; baseline finish 2007-03-30 → 2007-04-27 |
| 120 | 增加4个后台功能 | 2007-04-26 → 2007-04-02 A (-24d) | 2007-04-27 → 2007-04-25 A (-2d) | 1d? → 0d? | 0% → 100% | 7d → none |  | baseline start 2007-03-29 → 2007-04-26; baseline finish 2007-03-30 → 2007-04-27 |
| 121 | **非业务交易的日志保存和查看** | 2007-05-08 A | 2007-05-15 → 2007-05-25 (+10d) | 5d? → 14d? | 0% → 99% | 0d → 31.5d |  | baseline start 2007-04-10 → 2007-05-08; baseline finish 2007-04-17 → 2007-05-15 |
| 122 | 检查接口，入库 | 2007-05-08 → 2007-05-24 (+16d) | 2007-05-15 → 2007-05-24 (+9d) | 5d? → 0d? |  | 0d → 32.5d |  | resources 文档管理员 → 范露玫; baseline start 2007-04-10 → 2007-05-08; baseline finish 2007-04-17 → 2007-05-15 |
| 123 | 在bu入口保存buffer | 2007-05-08 A | 2007-05-09 → 2007-05-08 A (-1d) |  | 0% → 100% | 3d → none |  | resources 汤成 → 闻剑; baseline start 2007-04-10 → 2007-05-08; baseline finish 2007-04-11 → 2007-05-09 |
| 124 | 前台显示内容 | 2007-05-08 → 2007-05-24 (+16d) | 2007-05-10 → 2007-05-25 (+15d) | 2d? → 0d? |  | 3d → 31.5d |  | resources 韩纪伟 → 韩纪伟 [50%]; baseline start 2007-04-10 → 2007-05-08; baseline finish 2007-04-12 → 2007-05-10 |
| 125 | 后台解析内容 | 2007-05-09 → 2007-05-24 (+15d) | 2007-05-10 → 2007-05-24 (+14d) | 1d? → 0d? |  | 3d → 32.5d |  | resources 汤成 → 闻剑; baseline start 2007-04-11 → 2007-05-09; baseline finish 2007-04-12 → 2007-05-10 |
| 126 | 增加操作员号和工作站号 | 2007-05-15 → 2007-05-28 (+13d) | 2007-05-16 → 2007-05-28 (+12d) | 0.5d? → 0d? |  | 0d → 31.5d |  | baseline start 2007-04-17 → 2007-05-15; baseline finish 2007-04-23 → 2007-05-16 |
| 127 | **定时任务的管理** | 2007-05-16 → 2007-05-28 A (+12d) | 2007-05-16 → 2007-05-28 A (+12d) |  | 0% → 100% | 0d → none |  | baseline start 2007-04-23 → 2007-05-16; baseline finish 2007-04-23 → 2007-05-16 |
| 128 | 前台增加修改查询界面 | 2007-05-16 → 2007-05-28 A (+12d) | 2007-05-16 → 2007-05-28 A (+12d) |  | 0% → 100% | 0d → none |  | baseline start 2007-04-23 → 2007-05-16; baseline finish 2007-04-23 → 2007-05-16 |
| 129 | 后台增加读取和修改contab的功能 | 2007-05-16 → 2007-05-28 A (+12d) | 2007-05-16 → 2007-05-28 A (+12d) |  | 0% → 100% | 3.5d → none |  | baseline start 2007-04-23 → 2007-05-16; baseline finish 2007-04-23 → 2007-05-16 |
| 130 | syslog的统一 | 2007-01-24 → 2007-02-06 A (+13d) | 2007-02-07 → 2007-03-02 A (+23d) | 10d? → 0d? | 0% → 100% | 54.71d → none |  | baseline start 2007-01-23 → 2007-01-24; baseline finish 2007-02-06 → 2007-02-07 |
| 131 | 时钟同步方案 | 2007-01-29 → 2007-05-03 A (+94d) | 2007-01-30 → 2007-05-03 A (+93d) | 1d? → 0d? | 0% → 100% | 68.93d → none |  | baseline start 2007-01-26 → 2007-01-29; baseline finish 2007-01-29 → 2007-01-30 |
| 132 | 自动化升级 | 2006-12-18 → 2007-02-01 A (+45d) | 2006-12-25 → 2007-02-25 A (+62d) | 5d? → 0d? | 0% → 100% | 99.4d → none |  | constraint none → start no earlier than 2007-02-01; resources 待定 → 闻剑 |
| 133 | **系统安装** | 2007-01-30 → 2007-05-03 A (+93d) | 2007-02-01 → 2007-05-18 A (+106d) | 2d? → 11.38d? | 0% → 100% | 68.93d → none |  | baseline start 2007-01-29 → 2007-01-30; baseline finish 2007-01-31 → 2007-02-01 |
| 134 | b/s*.war部署 | 2007-01-30 → 2007-05-04 A (+94d) | 2007-01-30 → 2007-05-04 A (+94d) |  | 0% → 100% | 73.93d → none |  | baseline start 2007-01-29 → 2007-01-30; baseline finish 2007-01-29 → 2007-01-30 |
| 135 | 后台的安装.o和.bnd | 2007-01-30 → 2007-05-03 A (+93d) | 2007-02-01 → 2007-05-18 A (+106d) |  | 0% → 100% | 68.93d → none |  | resources 汤成 → 汤成 [25%]; baseline start 2007-01-29 → 2007-01-30; baseline finish 2007-01-31 → 2007-02-01 |
| 136 | **blk的完善** | 2007-02-01 → 2007-03-23 A (+50d) | 2007-02-06 → 2007-05-08 A (+91d) | 3d? → 32.69d? | 0% → 100% | 68.93d → none |  | baseline start 2007-01-31 → 2007-02-01; baseline finish 2007-02-05 → 2007-02-06 |
| 137 | 提高可配置性 | 2007-02-01 → 2007-03-23 A (+50d) | 2007-02-01 → 2007-04-10 A (+68d) | 0d? → 2d? | 0% → 100% | 68.93d → none |  | resources 汤成 → 汤成 [25%]; baseline start 2007-01-31 → 2007-02-01; baseline finish 2007-01-31 → 2007-02-01 |
| 138 | 解决cpu占用率的问题 | 2007-02-01 → 2007-03-26 A (+53d) | 2007-02-06 → 2007-05-08 A (+91d) | 3d? → 1d? | 0% → 100% | 68.93d → none | 137 → none | resources 汤成 → 汤成 [87.5%]; baseline start 2007-01-31 → 2007-02-01; baseline finish 2007-02-05 → 2007-02-06 |
| 139 | 前台的所有的错误提示统一风格 | 2006-12-31 → 2007-02-01 A (+32d) | 2007-01-10 → 2007-02-12 A (+33d) | 5d? → 1d? | 0% → 100% | 87.97d → none |  | constraint none → start no earlier than 2007-02-01; resources 待定 → 闻剑; 韩海东 [2.1%]; baseline start 2007-01-02 → 2006-12-31; baseline finish 2007-01-09 → 2007-01-10 |
| 140 | 多帐户结算的修改 | 2006-12-31 → 2007-05-18 (+138d) | 2007-01-08 → 2007-05-18 (+130d) | 3d? → 1d? |  | 81.43d → 34d |  | resources 韩海东 → 韩海东 [50%]; baseline start 2007-01-02 → 2006-12-31; baseline finish 2007-01-05 → 2007-01-08 |
| 141 | 卡库不平和个人账户不平的调整 | 2007-01-08 → 2007-01-26 A (+18d) | 2007-01-11 → 2007-05-28 (+137d) | 3d? → 8d? | 0% → 63% | 81.43d → 31d |  | resources 韩海东 → 韩海东 [87.5%]; baseline start 2007-01-05 → 2007-01-08; baseline finish 2007-01-10 → 2007-01-11 |
| 142 | 查询数据的筛选-控制操作权限 | 2007-05-16 → 2007-05-08 A (-8d) | 2007-05-21 → 2007-05-08 A (-13d) | 3.5d? → 0d? | 0% → 100% | 0d → none |  | baseline start 2007-04-24 → 2007-05-16; baseline finish 2007-05-09 → 2007-05-21 |
| 143 | 卡片使用张数的统计 | 2007-01-11 → 2007-04-09 A (+88d) | 2007-01-11 → 2007-04-09 A (+88d) |  | 0% → 100% | 81.43d → none | 141 → none | constraint none → start no earlier than 2007-04-09; baseline start 2007-01-10 → 2007-01-11; baseline finish 2007-01-10 → 2007-01-11 |
| 144 | 完善独立核算和非独立核算的机制 | 2007-03-16 A | 2007-03-20 → 2007-04-09 A (+20d) | 0.79d? → 0d? | 0% → 100% | 44.17d → none |  | resources 韩海东 → 韩海东 [27.3%]; baseline start 2007-02-01 → 2007-03-16; baseline finish 2007-02-02 → 2007-03-20 |

| ID | Task | Start | Finish | Duration | Complete | Total float | Predecessors | Other |
| --- | --- | --- | --- | --- | --- | --- | --- | --- |
| 145 | 对接的v23设备中途拔卡的处理 | 2007-02-06 → 2007-05-11 A (+94d) | 2007-02-06 → 2007-05-11 A (+94d) |  | 0% → 100% | 68.93d → none |  | baseline start 2007-02-05 → 2007-02-06; baseline finish 2007-02-05 → 2007-02-06 |
| 146 | 16、通用网关系统的完善 | 2006-12-28 → 2006-12-18 A (-10d) | 2007-01-12 → 2007-05-17 A (+125d) | 10d? → 35d? | 0% → 100% | 24.17d → none |  | resources 汤成 → 汤成 [106.2%]; baseline finish 2007-01-11 → 2007-01-12 |
| 147 | **06、银行圈存系统完善** | 2007-01-11 → 2007-02-12 A (+32d) | 2007-03-05 → 2007-05-30 (+86d) | 32.72d? → 73d? | 0% → 99% | 54.71d → 29d |  | baseline start 2007-01-10 → 2007-01-11; baseline finish 2007-02-23 → 2007-03-05 |
| 148 | 圈存机的业务监控-心跳 | 2007-01-11 → 2007-02-12 A (+32d) | 2007-01-12 → 2007-05-21 (+129d) | 1d? → 0d? |  | 81.43d → 36d |  | resources 韩海东 → 韩海东 [25%]; baseline start 2007-01-10 → 2007-01-11; baseline finish 2007-01-11 → 2007-01-12 |
| 149 | 银行通讯接口和自身业务的分离 | 2007-01-12 → 2007-05-08 A (+116d) | 2007-01-19 → 2007-05-08 A (+109d) | 5d? → 0d? | 0% → 100% | 81.43d → none | 148 → none | constraint none → start no earlier than 2007-05-08; baseline start 2007-01-11 → 2007-01-12; baseline finish 2007-01-18 → 2007-01-19 |
| 150 | 结构的调整 | 2007-02-12 → 2007-04-26 A (+73d) | 2007-03-05 → 2007-05-30 A (+86d) | 10d? → 3d? | 0% → 100% | 54.71d → none |  | resources 李翔 → 李翔 [50%]; baseline start 2007-02-09 → 2007-02-12; baseline finish 2007-02-23 → 2007-03-05 |
| 151 | **05、监控管理系统完善** | 2007-01-26 → 2006-12-18 A (-39d) | 2007-03-13 → 2007-05-24 (+72d) | 27.5d? → 108d? | 0% → 99% | 35.93d → 33d | 60 → none | baseline start 2007-01-25 → 2007-01-26; baseline finish 2007-03-05 → 2007-03-13 |
| 152 | **现有业务的整改** | 2007-01-26 → 2007-02-05 A (+10d) | 2007-02-08 → 2007-02-25 A (+17d) | 9.5d? → 10d? | 0% → 100% | 35.93d → none |  | baseline start 2007-01-25 → 2007-01-26; baseline finish 2007-02-07 → 2007-02-08 |
| 153 | 数据字典的改造 | 2007-01-26 → 2007-02-15 A (+20d) | 2007-01-29 → 2007-02-25 A (+27d) |  | 0% → 100% | 35.93d → none |  | resources 何林青 → 何林青 [6.2%]; baseline start 2007-01-25 → 2007-01-26; baseline finish 2007-01-26 → 2007-01-29 |
| 154 | gis操作的易用性改造（提示/点击进入等） | 2007-01-29 → 2007-02-25 A (+27d) | 2007-01-31 → 2007-02-25 A (+25d) | 2d? → 1d? | 0% → 100% | 35.93d → none |  | resources 何林青 → 何林青 [6.2%]; baseline start 2007-01-26 → 2007-01-29; baseline finish 2007-01-30 → 2007-01-31 |
| 155 | 系统菜单专业化/布局合理化 | 2007-01-31 → 2007-02-25 A (+25d) | 2007-02-01 → 2007-02-25 A (+24d) |  | 0% → 100% | 35.93d → none |  | resources 何林青 → 何林青 [6.2%]; baseline start 2007-01-30 → 2007-01-31; baseline finish 2007-01-31 → 2007-02-01 |
| 156 | 图例位置合理化 | 2007-02-01 → 2007-02-25 A (+24d) | 2007-02-02 → 2007-02-25 A (+23d) |  | 0% → 100% | 35.93d → none |  | resources 何林青 → 何林青 [6.2%]; baseline start 2007-01-31 → 2007-02-01; baseline finish 2007-02-01 → 2007-02-02 |
| 157 | 图例用的图片优化 | 2007-02-02 → 2007-02-25 A (+23d) | 2007-02-02 → 2007-02-25 A (+23d) | 0.5d? → 1d? | 0% → 100% | 35.93d → none |  | resources 何林青 → 何林青 [6.2%]; baseline start 2007-02-01 → 2007-02-02; baseline finish 2007-02-01 → 2007-02-02 |
| 158 | 前台增加系统监控日志展现 | 2007-02-02 → 2007-02-25 A (+23d) | 2007-02-06 → 2007-02-25 A (+19d) | 2d? → 1d? | 0% → 100% | 35.93d → none |  | resources 何林青 → 何林青 [6.2%]; baseline start 2007-02-01 → 2007-02-02; baseline finish 2007-02-05 → 2007-02-06 |
| 159 | 丢数采集业务的完善-存在缺陷 | 2007-02-06 → 2007-02-05 A (-1d) | 2007-02-08 → 2007-02-07 A (-1d) | 2d? → 3d? | 0% → 100% | 35.93d → none |  | baseline start 2007-02-05 → 2007-02-06; baseline finish 2007-02-07 → 2007-02-08 |
| 160 | **系统输出功能增强** | 2007-02-08 → 2006-12-30 A (-40d) | 2007-03-06 → 2007-05-24 (+79d) | 13d? → 98d? |  | 35.93d → 33d |  | baseline start 2007-02-07 → 2007-02-08; baseline finish 2007-02-26 → 2007-03-06 |
| 161 | **增加分析报表** | 2007-02-08 → 2006-12-30 A (-40d) | 2007-03-06 → 2007-05-24 (+79d) | 13d? → 98d? |  | 35.93d → 33d |  | baseline start 2007-02-07 → 2007-02-08; baseline finish 2007-02-26 → 2007-03-06 |
| 162 | 设备状态变化报表 | 2007-02-08 → 2006-12-30 A (-40d) | 2007-02-15 → 2007-05-14 A (+88d) | 5d? → 0d? | 0% → 100% | 35.93d → none |  | resources 何林青 → 何林青 [50%]; baseline start 2007-02-07 → 2007-02-08; baseline finish 2007-02-14 → 2007-02-15 |
| 163 | 流水异常统计 | 2007-02-15 → 2007-05-15 A (+89d) | 2007-03-01 → 2007-05-21 A (+81d) | 5d? → 0d? | 0% → 100% | 35.93d → none |  | resources 何林青 → 何林青 [50%]; baseline start 2007-02-14 → 2007-02-15; baseline finish 2007-02-21 → 2007-03-01 |
| 164 | 其他可能的报表 | 2007-03-01 → 2007-05-22 (+82d) | 2007-03-06 → 2007-05-24 (+79d) | 3d? → 0d? |  | 35.93d → 33d |  | baseline start 2007-02-21 → 2007-03-01; baseline finish 2007-02-26 → 2007-03-06 |
| 165 | 增加查询结果印功能 | 2007-03-06 → 2007-04-16 A (+41d) | 2007-03-06 → 2007-04-16 A (+41d) |  | 0% → 100% | 35.93d → none |  | baseline start 2007-02-26 → 2007-03-06; baseline finish 2007-02-26 → 2007-03-06 |
| 166 | **新增业务** | 2007-03-06 → 2006-12-18 A (-78d) | 2007-03-13 → 2007-04-16 A (+34d) | 5d? → 80d? | 0% → 100% | 35.93d → none |  | baseline start 2007-02-26 → 2007-03-06; baseline finish 2007-03-05 → 2007-03-13 |
| 167 | 增加对服务器的监控 | 2007-03-06 → 2006-12-18 A (-78d) | 2007-03-06 → 2007-01-04 A (-61d) | 0d? → 1d? | 0% → 100% | 35.93d → none |  | resources 何林青 → 何林青 [75%]; baseline start 2007-02-26 → 2007-03-06; baseline finish 2007-02-26 → 2007-03-06 |
| 168 | 增加对数据库的监控 | 2007-03-06 → 2006-12-19 A (-77d) | 2007-03-06 → 2006-12-19 A (-77d) | 0d? → 1d? | 0% → 100% | 35.93d → none |  | resources 何林青 → 何林青 [62.5%]; baseline start 2007-02-26 → 2007-03-06; baseline finish 2007-02-26 → 2007-03-06 |
| 169 | 增加对软件/服务端口的监控 | 2007-03-06 → 2006-12-20 A (-76d) | 2007-03-06 → 2007-01-05 A (-60d) | 0d? → 1d? | 0% → 100% | 35.93d → none |  | resources 何林青 → 何林青 [75%]; baseline start 2007-02-26 → 2007-03-06; baseline finish 2007-02-26 → 2007-03-06 |
| 170 | 增加对通讯平台的监控 | 2007-03-06 → 2007-04-16 A (+41d) | 2007-03-06 → 2007-04-16 A (+41d) |  | 0% → 100% | 35.93d → none |  | baseline start 2007-02-26 → 2007-03-06; baseline finish 2007-02-26 → 2007-03-06 |
| 171 | 对接系统的监控-图书馆 | 2007-03-06 → 2007-04-16 A (+41d) | 2007-03-13 → 2007-04-16 A (+34d) | 5d? → 0d? | 0% → 100% | 35.93d → none |  | baseline start 2007-02-26 → 2007-03-06; baseline finish 2007-03-05 → 2007-03-13 |
| 172 | **10、多媒体查询系统改版** | 2007-01-16 → 2007-02-08 A (+23d) | 2007-04-17 → 2007-05-10 A (+23d) | 60d? → 61d? | 0% → 100% | 24.31d → none |  | baseline start 2007-01-15 → 2007-01-16; baseline finish 2007-04-09 → 2007-04-17 |
| 173 | 多媒体前台部分 | 2007-01-16 → 2007-02-08 A (+23d) | 2007-03-06 → 2007-04-30 A (+55d) | 30d? → 19d? | 0% → 100% | 54.31d → none |  | was named 展示部分; resources 待定 → 何林青; baseline start 2007-01-15 → 2007-01-16; baseline finish 2007-02-26 → 2007-03-06 |
| 174 | 多媒体后台部分 | 2007-03-06 → 2007-02-12 A (-22d) | 2007-04-17 → 2007-05-10 A (+23d) | 30d? → 16d? | 0% → 100% | 24.31d → none |  | was named 维护部分; resources 待定 → 何林青; baseline start 2007-02-26 → 2007-03-06; baseline finish 2007-04-09 → 2007-04-17 |
| 175 | **08、领导查询系统完善** | 2007-03-29 A | 2007-04-02 → 2007-04-03 A (+1d) | 2d? → 3.28d? | 0% → 100% | 35.17d → none |  | baseline start 2007-03-12 → 2007-03-29; baseline finish 2007-03-14 → 2007-04-02 |
| 176 | 经费本充值次数 | 2007-03-29 A | 2007-03-30 → 2007-04-02 A (+3d) | 1d? → 0d? | 0% → 100% | 35.17d → none |  | resources 韩纪伟 → 韩纪伟 [69.1%]; baseline start 2007-03-12 → 2007-03-29; baseline finish 2007-03-13 → 2007-03-30 |
| 177 | 增加个人、设备的明细记录查询 | 2007-03-30 → 2007-04-03 A (+4d) | 2007-04-02 → 2007-04-03 A (+1d) | 1d? → 0d? | 0% → 100% | 35.17d → none |  | resources 韩纪伟 → 韩纪伟 [39.2%]; baseline start 2007-03-13 → 2007-03-30; baseline finish 2007-03-14 → 2007-04-02 |
| 178 | **09、综合查询系统完善** | 2007-03-27 → 2007-05-01 A (+35d) | 2007-04-04 → 2007-05-09 A (+35d) |  | 0% → 100% | 22.8d → none |  | baseline start 2007-03-12 → 2007-03-27; baseline finish 2007-03-20 → 2007-04-04 |
| 179 | 展现现代教育中心上机流水 | 2007-03-27 → 2007-05-01 A (+35d) | 2007-03-30 → 2007-05-01 A (+32d) | 3d? → 0d? | 0% → 100% | 25.8d → none |  | baseline start 2007-03-12 → 2007-03-27; baseline finish 2007-03-15 → 2007-03-30 |
| 180 | 展现光华楼门禁流水 | 2007-03-30 → 2007-05-04 A (+35d) | 2007-04-04 → 2007-05-09 A (+35d) | 3d? → 0d? | 0% → 100% | 22.8d → none |  | baseline start 2007-03-15 → 2007-03-30; baseline finish 2007-03-20 → 2007-04-04 |
| 181 | 07、考勤管理系统完善 | 2007-04-02 → 2006-12-18 A (-105d) | 2007-05-15 → 2007-03-19 A (-57d) | 10d? → 13d? | 0% → 100% | 4.5d → none |  | constraint start no earlier than 2006-12-25 → none; baseline start 2007-04-16 → 2007-04-02; baseline finish 2007-05-04 → 2007-05-15 |
| 182 | webservice通用接口 | 2007-04-04 → 2007-05-09 A (+35d) | 2007-04-18 → 2007-05-24 A (+36d) | 10d? → 2d? | 0% → 100% | 22.8d → none |  | resources 何林青 → 何林青 [68.8%]; baseline start 2007-03-20 → 2007-04-04; baseline finish 2007-04-03 → 2007-04-18 |
| 187 | **上线系统维护和变更** | 2006-12-19 → 2006-12-18 A (-1d) | 2007-03-20 → 2007-07-09 (+111d) | 59.17d? → 140d? | 0% → 88% | 43.8d → 1d |  | baseline finish 2007-03-12 → 2007-03-20 |
| 188 | 复旦大学 | 2006-12-19 → 2006-12-18 A (-1d) | 2007-03-09 → 2007-07-09 A (+122d) | 17.14d? → 56d? | 0% → 100% | 51.48d → none |  | resources 韩海东; 韩纪伟; 汤成; 何林青; 李翔; 待定; 文档管理员 → 韩海东 [168.8%]; 韩纪伟; 汤成 [62.5%]; 何林青; 李翔; 闻剑; 范露玫; baseline finish 2007-03-01 → 2007-03-09 |
| 189 | 上海大学 | 2007-01-10 → 2006-12-25 A (-16d) | 2007-03-19 → 2007-06-14 (+87d) | 10d? → 28d? | 0% → 48% | 45.38d → 18d |  | resources 汤成; 何林青; 李翔; 待定; 文档管理员 → 汤成 [31.2%]; 何林青 [37.5%]; 李翔; 闻剑; 范露玫; 韩纪伟; 韩海东 [112.5%]; baseline start 2007-01-09 → 2007-01-10; baseline finish 2007-03-09 → 2007-03-19 |
| 190 | 泰州大学 | 2007-01-12 → 2007-01-11 A (-1d) | 2007-03-20 A | 9.9d? → 6d? | 0% → 100% | 43.8d → none |  | resources 韩纪伟; 汤成; 何林青; 李翔; 待定; 文档管理员 → 韩纪伟 [12.5%]; 汤成; 何林青; 李翔 [75%]; 范露玫; 韩海东 [50%]; baseline start 2007-01-11 → 2007-01-12; baseline finish 2007-03-12 → 2007-03-20 |
| 191 | 理工大学 | 2006-12-22 → 2006-12-21 A (-1d) | 2007-03-15 → 2007-06-22 A (+99d) | 14.41d? → 35d? | 0% → 100% | 47.38d → none |  | resources 韩海东; 韩纪伟; 汤成; 何林青; 李翔; 待定; 文档管理员 → 韩海东 [75%]; 韩纪伟 [37.5%]; 汤成 [143.8%]; 何林青 [25%]; 李翔; 闻剑; 范露玫; baseline finish 2007-03-07 → 2007-03-15 |
| 192 | **系统培训** | 2007-02-07 → 2007-02-01 A (-6d) | 2007-05-02 → 2007-05-23 (+21d) | 54.78d? → 74.02d? | 0% → 69% | 13d → 34.86d |  | baseline start none → 2007-02-07; baseline finish none → 2007-05-02 |
| 193 | 一卡通结算相关培训 | 2007-03-05 → 2007-02-01 A (-32d) | 2007-03-16 → 2007-05-15 (+60d) | 5d? → 1d? |  | 45.96d → 40d |  | resources 韩海东; 李翔 → 韩海东 [50%]; 李翔; baseline start none → 2007-03-05; baseline finish none → 2007-03-16 |
| 194 | 一卡通web应用培训 | 2007-03-19 → 2007-05-08 A (+50d) | 2007-03-29 → 2007-05-22 (+54d) | 8d? → 0d? |  | 37.17d → 35.38d |  | resources 韩纪伟; 何林青 → 韩纪伟; 何林青 [50%]; baseline start none → 2007-03-19; baseline finish none → 2007-03-29 |
| 195 | 一卡通产品体系架构培训 | 2007-04-18 A | 2007-05-02 → 2007-05-23 (+21d) | 5d? → 0d? |  | 13d → 34.86d |  | resources 汤成 → 汤成 [25%]; baseline start none → 2007-04-18; baseline finish none → 2007-05-02 |
| 196 | 一卡通卡务业务相关培训 | 2007-02-07 A | 2007-03-02 → 2007-05-17 A (+76d) | 10d? → 2.25d? | 0% → 100% | 55.78d → none |  | resources 滕斌 → 滕斌 [50%]; baseline start none → 2007-02-07; baseline finish none → 2007-03-02 |
| 197 | 其他 | 2006-12-18 A | 2007-03-06 → 2007-06-08 (+94d) | 8.57d? → 67d? | 0% → 95% | 54.33d → 22d |  | resources 韩海东; 韩纪伟; 汤成; 何林青; 李翔; 待定; 文档管理员 → 韩海东 [112.5%]; 韩纪伟; 汤成 [18.8%]; 何林青 [87.5%]; 李翔; 闻剑 [75%]; 滕斌; baseline finish 2007-02-26 → 2007-03-06 |
| 198 | **项目测试活动** | 2006-12-18 → 2007-01-24 A (+37d) | 2007-04-16 → 2007-07-09 (+84d) | 79.7d? → 113.8d? | 0% → 98% | 24.71d → 1.2d |  | baseline finish 2007-04-18 → 2007-04-16 |
| 199 | **新对接系统测试** | 2007-01-22 → 2007-01-31 A (+9d) | 2007-04-16 → 2007-06-05 (+50d) | 55.57d? → 84.12d? | 0% → 99% | 24.71d → 25.88d |  | baseline start 2007-02-06 → 2007-01-22; baseline finish 2007-04-09 → 2007-04-16 |
| 200 | **水控系统** | 2007-01-23 → 2007-01-31 A (+8d) | 2007-03-21 → 2007-04-17 A (+27d) | 36.62d? → 50d? | 0% → 100% | 42.65d → none |  | baseline start 2007-02-21 → 2007-01-23; baseline finish 2007-02-28 → 2007-03-21 |
| 201 | 业务熟悉 | 2007-03-21 → 2007-01-31 A (-49d) | 2007-03-21 → 2007-02-07 A (-42d) | 0.5d? → 2d? | 0% → 100% | 42.65d → none |  | constraint none → start no earlier than 2007-05-18; resources 滕斌 → 滕斌 [25%]; baseline start 2007-02-27 → 2007-03-21; baseline finish 2007-02-28 → 2007-03-21 |
| 202 | 测试工作 | 2007-03-16 → 2007-02-06 A (-38d) | 2007-03-20 → 2007-02-27 A (-21d) | 2d? → 9d? | 0% → 100% | 44.4d → none |  | constraint none → start no earlier than 2007-05-21; resources 滕斌 → 滕斌 [75%]; baseline start 2007-02-21 → 2007-03-16; baseline finish 2007-02-23 → 2007-03-20 |
| 203 | 验证缺陷修改 | 2007-01-23 → 2007-02-09 A (+17d) | 2007-01-23 → 2007-03-01 A (+37d) | 0.5d? → 4d? | 0% → 100% | 77.53d → none |  | constraint none → start no earlier than 2007-05-25; resources 滕斌 → 滕斌 [25%]; baseline start 2007-02-28 → 2007-01-23; baseline finish 2007-02-28 → 2007-01-23 |
| 204 | 回归测试 | 2007-03-20 → 2007-04-16 A (+27d) | 2007-03-21 → 2007-04-17 A (+27d) | 0.75d? → 2d? | 0% → 100% | 43.15d → none |  | constraint none → start no earlier than 2007-05-28; resources 滕斌 → 滕斌 [50%]; baseline start 2007-02-23 → 2007-03-20; baseline finish 2007-02-26 → 2007-03-21 |
| 205 | **门禁系统** | 2007-01-22 → 2007-02-25 A (+34d) | 2007-03-14 → 2007-06-05 (+83d) | 32.75d? → 72.12d? | 0% → 99% | 47.53d → 25.88d |  | baseline start 2007-02-12 → 2007-01-22; baseline finish 2007-02-19 → 2007-03-14 |
| 207 | 业务熟悉 | 2007-01-22 → 2007-02-27 A (+36d) | 2007-01-23 → 2007-05-09 A (+106d) | 1d? → 5d? | 0% → 100% | 78.03d → none |  | constraint none → start no earlier than 2007-02-27; resources 滕斌 → 滕斌 [75%]; baseline start 2007-02-14 → 2007-01-22; baseline finish 2007-02-15 → 2007-01-23 |
| 209 | 测试工作 | 2007-03-08 → 2007-03-05 A (-3d) | 2007-03-13 → 2007-04-11 A (+29d) | 2.5d? → 3d? | 0% → 100% | 49.03d → none |  | constraint none → start no earlier than 2007-03-05; resources 滕斌 → 滕斌 [50%]; baseline start 2007-02-12 → 2007-03-08; baseline finish 2007-02-14 → 2007-03-13 |
| 210 | 验证缺陷修改 | 2007-03-14 → 2007-02-25 A (-17d) | 2007-03-14 → 2007-04-02 A (+19d) | 0.5d? → 0d? | 0% → 100% | 47.53d → none |  | resources 滕斌 → 滕斌 [25%]; baseline start 2007-02-16 → 2007-03-14; baseline finish 2007-02-19 → 2007-03-14 |
| 211 | 回归测试 | 2007-03-13 → 2007-03-26 A (+13d) | 2007-03-14 → 2007-03-30 A (+16d) | 1d? → 0d? | 0% → 100% | 48.03d → none |  | constraint none → start no earlier than 2007-03-26; baseline start 2007-02-15 → 2007-03-13; baseline finish 2007-02-16 → 2007-03-14 |
| 213 | 业务熟悉 | 2007-01-23 → 2007-05-18 (+115d) | 2007-01-23 → 2007-05-21 (+118d) | 0.25d? → 0d? |  | 68d → 36.88d |  | constraint none → start no earlier than 2007-05-18; baseline start 2007-01-19 → none; baseline finish 2007-01-19 → none |
| 215 | 测试工作 | 2007-01-25 → 2007-05-24 (+119d) | 2007-01-25 → 2007-05-28 (+123d) | 0.5d? → 0d? |  | 67.9d → 31.38d | 213 → none | constraint none → start no earlier than 2007-05-24; baseline start 2007-01-22 → none; baseline finish 2007-01-22 → none |
| 216 | 验证缺陷修改 | 2007-01-25 → 2007-05-30 (+125d) | 2007-01-25 → 2007-05-31 (+126d) | 0.25d? → 0d? |  | 67.78d → 28.88d | 215 → none | constraint none → start no earlier than 2007-05-30; resources 滕斌 → 滕斌 [50%]; baseline start 2007-01-23 → none; baseline finish 2007-01-23 → none |
| 217 | 回归测试 | 2007-01-26 → 2007-06-04 (+129d) | 2007-02-07 → 2007-06-05 (+118d) | 0.25d? → 0d? |  | 67.78d → 25.88d | 216 → none | constraint none → start no earlier than 2007-06-04; baseline start 2007-01-23 → none; baseline finish 2007-01-23 → none |
| 218 | 机房软件的对接测试 | 2007-02-07 → 2007-04-25 A (+77d) | 2007-02-08 → 2007-04-26 A (+77d) | 1d? → 0d? | 0% → 100% | 66.71d → none |  | constraint none → start no earlier than 2007-04-25; baseline start 2007-02-06 → 2007-02-07; baseline finish 2007-02-07 → 2007-02-08 |
| 219 | 通道机的对接测试 | 2007-02-27 → 2007-06-04 (+97d) | 2007-02-28 → 2007-06-05 (+97d) | 1d? → 0d? |  | 57.83d → 25.88d |  | constraint none → start no earlier than 2007-02-16; resources 滕斌 → 滕斌 [42%]; baseline start 2007-02-19 → 2007-02-27; baseline finish 2007-02-20 → 2007-02-28 |
| 220 | 自助复印测试 | 2007-03-26 → 2007-04-10 A (+15d) | 2007-03-26 → 2007-04-16 A (+21d) | 0.5d? → 0d? | 0% → 100% | 39.71d → none |  | constraint none → start no earlier than 2007-03-30; baseline start 2007-03-13 → 2007-03-26; baseline finish 2007-03-14 → 2007-03-26 |
| 221 | 自助洗衣测试 | 2007-04-02 → 2007-04-06 A (+4d) | 2007-04-06 → 2007-04-17 A (+11d) | 0.5d? → 0d? | 0% → 100% | 31.21d → none |  | constraint none → start no earlier than 2007-04-06; baseline start 2007-03-23 → 2007-04-02; baseline finish 2007-03-23 → 2007-04-06 |
| 222 | 自助照相测试 | 2007-04-09 → 2007-04-10 A (+1d) | 2007-04-10 → 2007-04-17 A (+7d) | 1d? → 0d? | 0% → 100% | 29.21d → none |  | constraint none → start no earlier than 2007-04-10; baseline start 2007-04-02 → 2007-04-09; baseline finish 2007-04-02 → 2007-04-10 |

| ID | Task | Start | Finish | Duration | Complete | Total float | Predecessors | Other |
| --- | --- | --- | --- | --- | --- | --- | --- | --- |
| 223 | 电子寄存柜测试 | 2007-04-16 → 2007-04-23 A (+7d) | 2007-04-16 → 2007-04-23 A (+7d) | 0.5d? → 0d? | 0% → 100% | 24.71d → none |  | constraint none → start no earlier than 2007-04-23; baseline start 2007-04-09 → 2007-04-16; baseline finish 2007-04-09 → 2007-04-16 |
| 224 | 指纹考勤的支持测试 | 2007-03-09 → 2007-03-23 A (+14d) | 2007-03-09 → 2007-05-09 A (+61d) | 0.25d? → 0d? | 0% → 100% | 50.96d → none | 50SS+1d, 207FS+1d, 203FS+1d → 50SS+1d | constraint none → start no earlier than 2007-03-23; resources 滕斌 → 滕斌 [50%]; baseline start 2007-02-26 → 2007-03-09; baseline finish 2007-02-27 → 2007-03-09 |
| 225 | **现有系统的测试工作** | 2006-12-18 → 2007-01-24 A (+37d) | 2007-04-06 → 2007-07-09 (+94d) | 73.72d? → 113.8d? | 0% → 98% | 30.68d → 1.2d |  | baseline finish 2007-04-18 → 2007-04-06 |
| 226 | **拍照打卡** | 2007-01-23 → 2007-01-24 A (+1d) | 2007-02-07 → 2007-06-21 (+134d) | 11d? → 102d? | 0% → 92% | 67.78d → 13d |  | baseline start 2007-01-19 → 2007-01-23; baseline finish 2007-01-23 → 2007-02-07 |
| 227 | 业务熟悉 | 2007-03-15 → 2007-01-25 A (-49d) | 2007-03-15 → 2007-04-18 A (+34d) | 0.25d? → 3d? | 0% → 100% | 46.78d → none |  | constraint none → start no earlier than 2007-03-09; resources 滕斌 → 滕斌 [25%]; baseline start 2007-02-20 → 2007-01-23; baseline finish 2007-02-20 → 2007-01-23 |
| 229 | 测试工作 | 2007-01-04 → 2007-01-26 A (+22d) | 2007-01-18 → 2007-06-21 (+154d) | 10d? → 3d? | 0% → 67% | 48.88d → 13d | 259 → 228 | baseline start 2007-01-03 → 2007-01-25; baseline finish 2007-01-16 → 2007-01-25 |
| 230 | 验证缺陷修改 | 2007-01-18 → 2007-03-16 A (+57d) | 2007-01-22 → 2007-04-02 A (+70d) | 2d? → 0d? | 0% → 100% | 48.88d → none | 229 → none | constraint none → start no earlier than 2007-03-16; resources 滕斌 → 滕斌 [50%]; baseline start 2007-01-17 → 2007-01-25; baseline finish 2007-01-18 → 2007-01-25 |
| 231 | 回归测试 | 2007-03-02 → 2007-04-02 A (+31d) | 2007-03-08 → 2007-04-27 A (+50d) | 4d? → 2d? | 0% → 100% | 51.78d → none |  | resources 滕斌 → 滕斌 [25%]; baseline start 2007-01-23 → 2007-01-26; baseline finish 2007-02-12 → 2007-02-07 |
| 232 | **前后台业务** | 2006-12-18 → 2007-01-25 A (+38d) | 2007-03-08 → 2007-07-09 (+123d) | 52.62d? → 112.8d? | 0% → 98% | 48.88d → 1.2d |  | baseline finish 2007-02-12 → 2007-03-08 |
| 233 | 熟悉业务改动以及新增功能 | 2006-12-18 → 2007-05-03 A (+136d) | 2006-12-22 → 2007-06-29 (+189d) | 4d? → 10.12d? | 0% → 99% | 48.88d → 7d |  | constraint none → start no earlier than 2007-05-03; resources 滕斌 → 滕斌 [50%]; 赵浪; 王家欢 [50%]; 郭莉莉; baseline finish 2006-12-21 → 2006-12-22 |
| 234 | 各个测试模块功能、业务罗列 | 2006-12-22 → 2007-05-31 A (+160d) | 2006-12-27 → 2007-06-06 A (+161d) | 3d? → 2d? | 0% → 100% | 48.88d → none |  | baseline finish 2006-12-26 → 2006-12-27 |
| 235 | 部分模块制定测试方法 | 2006-12-27 → 2007-06-07 (+162d) | 2006-12-29 → 2007-06-08 (+161d) | 2d? → 0d? |  | 48.88d → 22d |  | resources 滕斌 → 滕斌 [33.3%]; baseline finish 2006-12-28 → 2006-12-29 |
| 239 | 回归测试 | 2007-03-15 → 2007-04-12 A (+28d) | 2007-03-15 → 2007-06-13 A (+90d) | 0.25d? → 1d? | 0% → 100% | 46.53d → none | none → 238 | constraint none → finish no earlier than 2007-06-13; resources 滕斌 → 滕斌 [37.5%]; baseline start 2007-02-21 → 2007-03-02; baseline finish 2007-02-21 → 2007-03-08 |
| 240 | **圈存完善测试** | 2007-03-15 → 2007-03-05 A (-10d) | 2007-03-16 → 2007-04-16 A (+31d) | 1.12d? → 30.77d? | 0% → 100% | 46.4d → none |  | baseline start 2007-02-19 → 2007-03-15; baseline finish 2007-02-21 → 2007-03-16 |
| 241 | 业务熟悉 | 2007-01-22 → 2007-03-05 A (+42d) | 2007-01-22 → 2007-04-02 A (+70d) | 0.25d? → 0d? | 0% → 100% | 39.75d → none |  | constraint none → start no earlier than 2007-03-05; resources 滕斌 → 滕斌 [50%]; baseline start 2007-01-19 → 2007-03-15; baseline finish 2007-01-19 → 2007-03-15 |
| 243 | 测试工作 | 2007-03-15 → 2007-03-12 A (-3d) | 2007-03-15 → 2007-04-02 A (+18d) | 0.5d? → 0d? | 0% → 100% | 47.03d → none |  | constraint none → start no earlier than 2007-03-12; resources 滕斌 → 滕斌 [25%]; baseline start 2007-02-19 → 2007-03-15; baseline finish 2007-02-20 → 2007-03-15 |
| 244 | 缺陷跟踪 | 2007-03-16 → 2007-03-19 A (+3d) | 2007-03-16 → 2007-04-02 A (+17d) | 0.12d? → 0d? | 0% → 100% | 46.4d → none |  | constraint none → start no earlier than 2007-03-19; baseline start 2007-02-21 → 2007-03-16; baseline finish 2007-02-21 → 2007-03-16 |
| 245 | 回归测试 | 2007-02-05 → 2007-04-16 A (+70d) | 2007-02-07 → 2007-04-16 A (+68d) | 2d? → 0d? | 0% → 100% | 67.93d → none | 250 → none | baseline start 2007-02-02 → 2007-03-15; baseline finish 2007-02-06 → 2007-03-15 |
| 246 | **监控系统** | 2007-01-26 → 2007-02-28 A (+33d) | 2007-02-07 → 2007-04-09 A (+61d) | 8.5d? → 28.88d? | 0% → 100% | 67.93d → none |  | baseline start 2007-01-25 → 2007-01-26; baseline finish 2007-02-06 → 2007-02-07 |
| 247 | 新业务熟悉 | 2007-01-26 → 2007-02-28 A (+33d) | 2007-01-26 → 2007-04-02 A (+66d) | 0.5d? → 0d? | 0% → 100% | 67.93d → none |  | constraint none → start no earlier than 2007-02-28; resources 滕斌 → 滕斌 [25%]; baseline start 2007-01-25 → 2007-01-26; baseline finish 2007-01-25 → 2007-01-26 |
| 248 | 修改现有的部分测试用例 | 2007-01-26 → 2007-03-12 A (+45d) | 2007-01-30 → 2007-04-03 A (+63d) | 1.5d? → 0d? | 0% → 100% | 67.93d → none |  | resources 滕斌 → 滕斌 [25%]; baseline start 2007-01-25 → 2007-01-26; baseline finish 2007-01-29 → 2007-01-30 |
| 249 | 测试工作 | 2007-01-30 → 2007-04-04 A (+64d) | 2007-02-05 → 2007-04-09 A (+63d) | 4d? → 0d? | 0% → 100% | 67.93d → none |  | resources 滕斌 → 滕斌 [25%]; baseline start 2007-01-29 → 2007-01-30; baseline finish 2007-02-02 → 2007-02-05 |
| 250 | 缺陷跟踪 | 2007-02-05 → 2007-03-15 A (+38d) | 2007-02-05 → 2007-04-02 A (+56d) | 0.5d? → 0d? | 0% → 100% | 67.93d → none | 249 → none | constraint none → start no earlier than 2007-03-15; resources 滕斌 → 滕斌 [25%]; baseline start 2007-02-02 → 2007-02-05; baseline finish 2007-02-02 → 2007-02-05 |
| 251 | 回归测试 | 2007-03-20 → 2007-04-02 A (+13d) | 2007-03-20 → 2007-04-04 A (+15d) | 0.5d? → 0d? | 0% → 100% | 43.9d → none | 255 → 250 | baseline start 2007-02-23 → 2007-02-05; baseline finish 2007-02-23 → 2007-02-07 |
| 252 | **多媒体查询系统** | 2007-01-22 → 2007-04-26 A (+94d) | 2007-03-20 → 2007-05-11 A (+52d) | 36.62d? → 11.88d? | 0% → 100% | 39.75d → none |  | baseline start 2007-01-19 → 2007-01-22; baseline finish 2007-02-23 → 2007-03-20 |
| 254 | 测试工作 | 2007-01-24 → 2007-05-11 A (+107d) | 2007-01-24 → 2007-05-11 A (+107d) | 1d? → 0d? | 0% → 100% | 39d → none | 241 → 253 | baseline start 2007-01-19 → 2007-01-24; baseline finish 2007-01-22 → 2007-01-24 |
| 255 | 缺陷跟踪 | 2007-01-25 → 2007-04-26 A (+91d) | 2007-01-25 → 2007-04-26 A (+91d) | 0.25d? → 0d? | 0% → 100% | 38.9d → none | 254 → none | constraint none → start no earlier than 2007-04-26; baseline start 2007-01-23 → 2007-01-25; baseline finish 2007-01-23 → 2007-01-25 |
| 256 | 回归测试 | 2007-03-30 → 2007-05-07 A (+38d) | 2007-03-30 → 2007-05-07 A (+38d) | 0.25d? → 0d? | 0% → 100% | 35.92d → none | 261 → 255 | constraint none → start no earlier than 2007-05-07; resources 滕斌 → 滕斌 [50%]; baseline start 2007-03-13 → 2007-03-20; baseline finish 2007-03-13 → 2007-03-20 |
| 257 | **领导查询** | 2007-03-29 → 2007-04-03 A (+5d) | 2007-03-30 → 2007-04-16 A (+17d) | 1.25d? → 9.38d? | 0% → 100% | 35.92d → none |  | baseline start 2007-03-12 → 2007-03-29; baseline finish 2007-03-13 → 2007-03-30 |
| 258 | 熟悉新业务 | 2007-03-29 → 2007-04-03 A (+5d) | 2007-03-29 → 2007-04-03 A (+5d) | 0.12d? → 0d? | 0% → 100% | 35.92d → none |  | constraint none → start no earlier than 2007-04-03; baseline start 2007-03-12 → 2007-03-29; baseline finish 2007-03-12 → 2007-03-29 |
| 259 | 修改部分测试用例 | 2006-12-29 → 2007-04-03 A (+95d) | 2007-01-04 → 2007-04-03 A (+89d) | 3d? → 0d? | 0% → 100% | 48.88d → none | 235 → 258 | baseline start 2006-12-29 → 2007-03-29; baseline finish 2007-01-02 → 2007-03-29 |
| 260 | 测试工作 | 2007-03-29 → 2007-04-03 A (+5d) | 2007-03-30 → 2007-04-03 A (+4d) | 0.5d? → 0d? | 0% → 100% | 35.92d → none | 265 → 259 | baseline start 2007-03-12 → 2007-03-29; baseline finish 2007-03-13 → 2007-03-30 |
| 261 | 缺陷跟踪 | 2007-03-30 → 2007-04-16 A (+17d) | 2007-03-30 → 2007-04-16 A (+17d) | 0.12d? → 0d? | 0% → 100% | 35.92d → none | 260 → none | constraint none → start no earlier than 2007-04-16; baseline start 2007-03-13 → 2007-03-30; baseline finish 2007-03-13 → 2007-03-30 |
| 262 | 回归测试 | 2007-04-06 → 2007-04-16 A (+10d) | 2007-04-06 → 2007-04-16 A (+10d) | 0.38d? → 0d? | 0% → 100% | 30.68d → none | 267 → 261 | baseline start 2007-03-22 → 2007-03-30; baseline finish 2007-03-22 → 2007-03-30 |
| 263 | **综合查询** | 2007-04-04 → 2007-05-09 A (+35d) | 2007-04-06 → 2007-06-22 A (+77d) | 2.12d? → 32.88d? | 0% → 100% | 30.68d → none |  | baseline start 2007-03-20 → 2007-04-04; baseline finish 2007-03-22 → 2007-04-06 |
| 264 | 熟悉新业务 | 2007-04-04 → 2007-05-09 A (+35d) | 2007-04-04 → 2007-05-09 A (+35d) | 0.25d? → 0d? | 0% → 100% | 30.68d → none |  | resources 滕斌 → 滕斌 [50%]; baseline start 2007-03-20 → 2007-04-04; baseline finish 2007-03-20 → 2007-04-04 |
| 265 | 修改部分测试用例 | 2007-03-29 → 2007-05-09 A (+41d) | 2007-03-29 → 2007-05-09 A (+41d) | 0.25d? → 0d? | 0% → 100% | 35.92d → none | 258 → 264 | resources 滕斌 → 滕斌 [25%]; baseline start 2007-03-12 → 2007-04-04; baseline finish 2007-03-12 → 2007-04-05 |
| 266 | 测试工作 | 2007-04-05 → 2007-05-09 A (+34d) | 2007-04-06 → 2007-05-10 A (+34d) | 0.75d? → 0d? | 0% → 100% | 30.68d → none | 修改部分测试用例 → 265 | resources 滕斌 → 滕斌 [50%]; baseline start 2007-03-21 → 2007-04-05; baseline finish 2007-03-22 → 2007-04-06 |
| 267 | 缺陷跟踪 | 2007-04-06 → 2007-05-09 A (+33d) | 2007-04-06 → 2007-05-09 A (+33d) | 0.25d? → 0d? | 0% → 100% | 30.68d → none | 266 → none | constraint none → start no earlier than 2007-03-29; resources 滕斌 → 滕斌 [50%]; baseline start 2007-03-22 → 2007-04-06; baseline finish 2007-03-22 → 2007-04-06 |
| 269 | 考勤的功能测试 | 2007-04-02 → 2007-02-02 A (-59d) | 2007-04-04 → 2007-04-02 A (-2d) | 2d? → 0d? | 0% → 100% | 33.17d → none |  | constraint none → start no earlier than 2007-02-02; resources 滕斌 → 滕斌 [12.5%]; baseline start 2007-04-16 → 2007-04-02; baseline finish 2007-04-18 → 2007-04-04 |

## Version 3 (data date 2007-07-08, saved 2007-07-13, file “校园一卡通系统”-项目进度计划(产品化).mpp)

Note of the change: add other documents

Last finish stays 2007-07-10. Complete tasks 188 → 217.

Changed:

| ID | Task | Start | Finish | Duration | Complete | Total float | Other |
| --- | --- | --- | --- | --- | --- | --- | --- |
| 1 | **一卡通产品开发计划** |  | 2007-07-10 A |  | 97% → 100% | 0d → none |  |
| 2 | **项目管理活动** |  | 2007-06-19 A |  | 97% → 100% | 15d → none |  |
| 3 | 工作计划维护 |  | 2007-04-11 A |  | 65% → 100% | 64d → none |  |
| 5 | 周项目组内部例会 |  | 2007-03-30 → 2007-03-29 A (-1d) | 1.25d → 1d | 80% → 100% | 72.75d → none |  |
| 7 | 工作周报 |  | 2007-06-04 A → 2007-06-05 A (+1d) |  |  |  |  |
| 8 | 工作协调 |  |  | 63d? → 62.92d? |  |  |  |
| 10 | **项目开发活动** |  | 2007-07-10 A |  | 97% → 100% | 0d → none |  |
| 14 | 产品的需求跟踪方法和流程-客户化、产品需求 |  |  | 15d? → 15.13d? |  |  |  |
| 16 | 制定系统上线检查表-checklist |  | 2007-03-13 A → 2007-03-06 A (-7d) |  |  |  |  |
| 19 | 完善产品使用手册 |  |  | 27d? → 74.88d? |  |  |  |
| 20 | 完善产品安装维护手册 |  | 2007-03-19 A → 2007-03-18 A (-1d) | 1d? → 0d? |  |  |  |
| 25 | **新系统对接** |  | 2007-06-06 A |  | 99% → 100% | 24.2d → none |  |
| 26 | **13、水控管理系统对接** |  |  | 89d? → 90d? |  |  |  |
| 27 | **三九水控的对接** |  |  | 89d? → 90d? |  |  |  |
| 34 | **联机模式的对接** |  |  | 30d? → 31d? |  |  |  |
| 42 | 汉军门禁的对接 |  | 2007-05-14 A → 2007-05-15 A (+1d) |  |  |  |  |
| 44 | 12、通道管理系统对接 | 2007-06-04 A | 2007-06-04 A |  | 0% → 100% | 25.88d → none |  |
| 50 | 指纹考勤的支持 |  | 2007-06-06 A |  | 0% → 100% | 24.2d → none |  |
| 51 | **现有系统的完善** |  | 2007-07-09 A |  | 98% → 100% | 1d → none |  |
| 57 | 拍照系统改版 |  |  | 1d? → 18d? |  |  | resources 韩纪伟 [75%] → 韩纪伟 |
| 60 | 实现脱机会议签到 |  |  | 11d? → 58.88d? |  |  |  |
| 64 | 通道机的对接设计 |  | 2007-01-26 A → 2007-01-25 A (-1d) |  |  |  |  |
| 78 | **02、综合管理系统完善** |  | 2007-06-08 A |  | 96% → 100% | 22d → none |  |
| 79 | 业务重新命名 |  | 2007-05-02 A → 2007-04-20 A (-12d) |  |  |  |  |
| 80 | 业务分支合并 |  | 2007-06-06 A | 21d? → 45d? | 95% → 100% | 24d → none |  |
| 82 | bcc+bu架构的升级 |  |  | 5d? → 9d? |  |  | resources 汤成 [50%]; 闻剑 → 汤成 [62.5%]; 闻剑 |
| 83 | 多个bcc的改造 |  | 2007-05-04 A → 2007-04-30 A (-4d) |  |  |  |  |
| 87 | 修改直接取帐户表部门、名字的问题 |  | 2007-03-27 A → 2007-03-19 A (-8d) |  |  |  |  |
| 97 | 数据库的备份方案 |  |  | 6d? → 10d? |  |  |  |
| 106 | 报表格式的统一修改 |  |  | 2d? → 3d? |  |  |  |
| 116 | **前台动态显示字段** |  | 2007-05-23 A |  | 99% → 100% | 33.5d → none |  |
| 118 | 增加维护界面 | 2007-05-17 A | 2007-05-23 A |  | 0% → 100% | 33.5d → none |  |
| 121 | **非业务交易的日志保存和查看** |  | 2007-05-25 A |  | 99% → 100% | 31.5d → none |  |
| 122 | 检查接口，入库 | 2007-05-24 A | 2007-05-24 A |  | 0% → 100% | 32.5d → none |  |
| 124 | 前台显示内容 | 2007-05-24 A | 2007-05-25 A |  | 0% → 100% | 31.5d → none |  |
| 125 | 后台解析内容 | 2007-05-24 A | 2007-05-24 A |  | 0% → 100% | 32.5d → none |  |
| 126 | 增加操作员号和工作站号 | 2007-05-28 A | 2007-05-28 A |  | 0% → 100% | 31.5d → none |  |
| 133 | **系统安装** |  | 2007-05-18 A → 2007-05-20 A (+2d) |  |  |  |  |
| 135 | 后台的安装.o和.bnd |  | 2007-05-18 A → 2007-05-20 A (+2d) |  |  |  |  |
| 136 | **blk的完善** |  | 2007-05-08 A → 2007-04-11 A (-27d) | 32.69d? → 14d? |  |  |  |
| 137 | 提高可配置性 |  | 2007-04-10 A → 2007-04-11 A (+1d) |  |  |  |  |
| 138 | 解决cpu占用率的问题 |  | 2007-05-08 A → 2007-03-27 A (-42d) |  |  |  |  |
| 140 | 多帐户结算的修改 | 2007-05-18 → 2007-05-17 A (-1d) | 2007-05-18 → 2007-05-17 A (-1d) | 1d? → 0d? | 0% → 100% | 34d → none |  |
| 141 | 卡库不平和个人账户不平的调整 |  | 2007-05-28 → 2007-02-11 A (-106d) | 8d? → 9d? | 63% → 100% | 31d → none |  |
| 146 | 16、通用网关系统的完善 |  | 2007-05-17 A → 2007-05-18 A (+1d) |  |  |  |  |
| 147 | **06、银行圈存系统完善** |  | 2007-05-30 A |  | 99% → 100% | 29d → none |  |
| 148 | 圈存机的业务监控-心跳 |  | 2007-05-21 A |  | 0% → 100% | 36d → none |  |
| 150 | 结构的调整 |  |  | 3d? → 11d? |  |  | resources 李翔 [50%] → 李翔 |
| 151 | **05、监控管理系统完善** |  | 2007-05-24 A |  | 99% → 100% | 33d → none |  |
| 160 | **系统输出功能增强** |  | 2007-05-24 A |  | 0% → 100% | 33d → none |  |
| 161 | **增加分析报表** |  | 2007-05-24 A |  | 0% → 100% | 33d → none |  |
| 164 | 其他可能的报表 | 2007-05-22 A | 2007-05-24 A |  | 0% → 100% | 33d → none |  |
| 178 | **09、综合查询系统完善** |  | 2007-05-09 A → 2007-05-04 A (-5d) | 6d? → 3.12d? |  |  |  |
| 180 | 展现光华楼门禁流水 |  | 2007-05-09 A → 2007-05-04 A (-5d) |  |  |  |  |
| 182 | webservice通用接口 |  |  | 2d? → 4d? |  |  | resources 何林青 [68.8%] → 何林青 |
| 187 | **上线系统维护和变更** |  | 2007-07-09 A |  | 88% → 100% | 1d → none |  |
| 188 | 复旦大学 |  |  | 56d? → 89.51d? |  |  | resources 韩海东 [168.8%]; 韩纪伟; 汤成 [62.5%]; 何林青; 李翔; 闻剑; 范露玫 → 韩海东 [164.3%]; 韩纪伟; 汤成; 何林青; 李翔; 闻剑; 范露玫 |
| 189 | 上海大学 |  | 2007-06-14 A | 28d? → 45d? | 48% → 100% | 18d → none | resources 汤成 [31.2%]; 何林青 [37.5%]; 李翔; 闻剑; 范露玫; 韩纪伟; 韩海东 [112.5%] → 汤成; 何林青 [37.5%]; 李翔; 闻剑; 范露玫; 韩纪伟; 韩海东 [112.5%] |
| 190 | 泰州大学 |  | 2007-03-20 A → 2007-02-27 A (-21d) |  |  |  |  |
| 191 | 理工大学 |  |  | 35d? → 68d? |  |  | resources 韩海东 [75%]; 韩纪伟 [37.5%]; 汤成 [143.8%]; 何林青 [25%]; 李翔; 闻剑; 范露玫 → 韩海东 [75%]; 韩纪伟; 汤成 [143.8%]; 何林青 [25%]; 李翔; 闻剑; 范露玫 |
| 192 | **系统培训** |  | 2007-05-23 → 2007-05-30 A (+7d) | 74.02d? → 79.02d? | 69% → 100% | 34.86d → none |  |
| 193 | 一卡通结算相关培训 |  | 2007-05-15 → 2007-05-18 A (+3d) | 1d? → 0d? | 0% → 100% | 40d → none |  |
| 194 | 一卡通web应用培训 |  | 2007-05-22 → 2007-05-28 A (+6d) |  | 0% → 100% | 35.38d → none |  |
| 195 | 一卡通产品体系架构培训 |  | 2007-05-23 → 2007-05-30 A (+7d) |  | 0% → 100% | 34.86d → none |  |
| 197 | 其他 |  | 2007-06-08 A | 67d? → 91d? | 95% → 100% | 22d → none | resources 韩海东 [112.5%]; 韩纪伟; 汤成 [18.8%]; 何林青 [87.5%]; 李翔; 闻剑 [75%]; 滕斌 → 韩海东 [112.5%]; 韩纪伟; 汤成 [125%]; 何林青 [87.5%]; 李翔; 闻剑 [75%]; 滕斌 |
| 198 | **项目测试活动** |  | 2007-07-09 → 2007-07-06 A (-3d) | 113.8d? → 113d? | 98% → 100% | 1.2d → none |  |
| 199 | **新对接系统测试** |  | 2007-06-05 A |  | 99% → 100% | 25.88d → none |  |
| 205 | **门禁系统** |  | 2007-06-05 A |  | 99% → 100% | 25.88d → none |  |
| 212 | **酬勤系统** | 2007-05-18 A | 2007-06-05 A |  | 0% → 100% | 25.88d → none |  |
| 213 | 业务熟悉 | 2007-05-18 A | 2007-05-21 A |  | 0% → 100% | 36.88d → none |  |

| ID | Task | Start | Finish | Duration | Complete | Total float |
| --- | --- | --- | --- | --- | --- | --- |
| 214 | 修改、编写测试用例 | 2007-05-22 A | 2007-05-23 A |  | 0% → 100% | 34.38d → none |
| 215 | 测试工作 | 2007-05-24 A | 2007-05-28 A |  | 0% → 100% | 31.38d → none |
| 216 | 验证缺陷修改 | 2007-05-30 A | 2007-05-31 A |  | 0% → 100% | 28.88d → none |
| 217 | 回归测试 | 2007-06-04 A | 2007-06-05 A |  | 0% → 100% | 25.88d → none |
| 218 | 机房软件的对接测试 |  | 2007-04-26 A → 2007-04-25 A (-1d) |  |  |  |
| 219 | 通道机的对接测试 | 2007-06-04 A | 2007-06-05 A |  | 0% → 100% | 25.88d → none |
| 225 | **现有系统的测试工作** |  | 2007-07-09 → 2007-07-06 A (-3d) | 113.8d? → 113d? | 98% → 100% | 1.2d → none |
| 226 | **拍照打卡** |  | 2007-06-21 → 2007-06-20 A (-1d) | 102d? → 101d? | 92% → 100% | 13d → none |
| 229 | 测试工作 |  | 2007-06-21 → 2007-06-20 A (-1d) | 3d? → 5d? | 67% → 100% | 13d → none |
| 232 | **前后台业务** |  | 2007-07-09 → 2007-07-06 A (-3d) | 112.8d? → 112d? | 98% → 100% | 1.2d → none |
| 233 | 熟悉业务改动以及新增功能 |  | 2007-06-29 A | 10.12d? → 12d? | 99% → 100% | 7d → none |
| 235 | 部分模块制定测试方法 | 2007-06-07 A | 2007-06-08 A |  | 0% → 100% | 22d → none |
| 237 | 执行测试 |  | 2007-07-09 → 2007-07-06 A (-3d) | 36.8d? → 45d? | 98% → 100% | 1.2d → none |
| 239 | 回归测试 |  | 2007-06-13 A → 2007-04-12 A (-62d) |  |  |  |
| 246 | **监控系统** |  | 2007-04-09 A → 2007-04-04 A (-5d) | 28.88d? → 25.88d? |  |  |
| 249 | 测试工作 |  | 2007-04-09 A → 2007-04-04 A (-5d) |  |  |  |
| 251 | 回归测试 |  | 2007-04-04 A → 2007-04-02 A (-2d) |  |  |  |
| 252 | **多媒体查询系统** |  |  | 11.88d? → 11.25d? |  |  |
| 270 | 会议签到功能测试 |  |  | 6d? → 16d? |  |  |
